# Office Move

How a schedule from MS Project changed from version to version. A marks actual dates.

## Version 1 (saved 2010-07-28, file OfficeMove_Views.mpp)

Note of the change: commit con wordpress

| ID | WBS | Task | Duration | Start | Finish | Predecessors | Complete | Total float | Constraint |
| --- | --- | --- | --- | --- | --- | --- | --- | --- | --- |
| 1 | 1 | **Mgt meetings** | 310.38d | 2010-11-03 A | 2012-01-11 |  | 9% | 6.12d |  |
| 2 |  | Mgt meetings 1 | 3h | 2010-11-03 A | 2010-11-03 A |  | 100% |  | start no earlier than 2010-11-03 |
| 3 |  | Mgt meetings 2 | 3h | 2010-11-17 A | 2010-11-17 A |  | 100% |  | start no earlier than 2010-11-17 |
| 4 |  | Mgt meetings 3 | 3h | 2010-12-01 A | 2010-12-01 A |  | 100% |  | start no earlier than 2010-12-01 |
| 5 |  | Mgt meetings 4 | 3h | 2010-12-15 | 2010-12-15 |  |  | 286.12d | start no earlier than 2010-12-15 |
| 6 |  | Mgt meetings 5 | 3h | 2010-12-29 | 2010-12-29 |  |  | 276.12d | start no earlier than 2010-12-29 |
| 7 |  | Mgt meetings 6 | 3h | 2011-01-12 | 2011-01-12 |  |  | 266.12d | start no earlier than 2011-01-12 |
| 8 |  | Mgt meetings 7 | 3h | 2011-01-26 | 2011-01-26 |  |  | 256.12d | start no earlier than 2011-01-26 |
| 9 |  | Mgt meetings 8 | 3h | 2011-02-09 | 2011-02-09 |  |  | 246.12d | start no earlier than 2011-02-09 |
| 10 |  | Mgt meetings 9 | 3h | 2011-02-23 | 2011-02-23 |  |  | 236.12d | start no earlier than 2011-02-23 |
| 11 |  | Mgt meetings 10 | 3h | 2011-03-09 | 2011-03-09 |  |  | 226.12d | start no earlier than 2011-03-09 |
| 12 |  | Mgt meetings 11 | 3h | 2011-03-23 | 2011-03-23 |  |  | 216.12d | start no earlier than 2011-03-23 |
| 13 |  | Mgt meetings 12 | 3h | 2011-04-06 | 2011-04-06 |  |  | 206.12d | start no earlier than 2011-04-06 |
| 14 |  | Mgt meetings 13 | 3h | 2011-04-20 | 2011-04-20 |  |  | 196.12d | start no earlier than 2011-04-20 |
| 15 |  | Mgt meetings 14 | 3h | 2011-05-04 | 2011-05-04 |  |  | 186.12d | start no earlier than 2011-05-04 |
| 16 |  | Mgt meetings 15 | 3h | 2011-05-18 | 2011-05-18 |  |  | 176.12d | start no earlier than 2011-05-18 |
| 17 |  | Mgt meetings 16 | 3h | 2011-06-01 | 2011-06-01 |  |  | 166.12d | start no earlier than 2011-06-01 |
| 18 |  | Mgt meetings 17 | 3h | 2011-06-15 | 2011-06-15 |  |  | 156.12d | start no earlier than 2011-06-15 |
| 19 |  | Mgt meetings 18 | 3h | 2011-06-29 | 2011-06-29 |  |  | 146.12d | start no earlier than 2011-06-29 |
| 20 |  | Mgt meetings 19 | 3h | 2011-07-13 | 2011-07-13 |  |  | 136.12d | start no earlier than 2011-07-13 |
| 21 |  | Mgt meetings 20 | 3h | 2011-07-27 | 2011-07-27 |  |  | 126.12d | start no earlier than 2011-07-27 |
| 22 |  | Mgt meetings 21 | 3h | 2011-08-10 | 2011-08-10 |  |  | 116.12d | start no earlier than 2011-08-10 |
| 23 |  | Mgt meetings 22 | 3h | 2011-08-24 | 2011-08-24 |  |  | 106.12d | start no earlier than 2011-08-24 |
| 24 |  | Mgt meetings 23 | 3h | 2011-09-07 | 2011-09-07 |  |  | 96.12d | start no earlier than 2011-09-07 |
| 25 |  | Mgt meetings 24 | 3h | 2011-09-21 | 2011-09-21 |  |  | 86.12d | start no earlier than 2011-09-21 |
| 26 |  | Mgt meetings 25 | 3h | 2011-10-05 | 2011-10-05 |  |  | 76.12d | start no earlier than 2011-10-05 |
| 27 |  | Mgt meetings 26 | 3h | 2011-10-19 | 2011-10-19 |  |  | 66.12d | start no earlier than 2011-10-19 |
| 28 |  | Mgt meetings 27 | 3h | 2011-11-02 | 2011-11-02 |  |  | 56.12d | start no earlier than 2011-11-02 |
| 29 |  | Mgt meetings 28 | 3h | 2011-11-16 | 2011-11-16 |  |  | 46.12d | start no earlier than 2011-11-16 |
| 30 |  | Mgt meetings 29 | 3h | 2011-11-30 | 2011-11-30 |  |  | 36.12d | start no earlier than 2011-11-30 |
| 31 |  | Mgt meetings 30 | 3h | 2011-12-14 | 2011-12-14 |  |  | 26.12d | start no earlier than 2011-12-14 |
| 32 |  | Mgt meetings 31 | 3h | 2011-12-28 | 2011-12-28 |  |  | 16.12d | start no earlier than 2011-12-28 |
| 33 |  | Mgt meetings 32 | 3h | 2012-01-11 | 2012-01-11 |  |  | 6.12d | start no earlier than 2012-01-11 |
| 34 | 2 | **Planning Move** | 75.5d | 2010-11-01 A | 2011-02-14 |  | 68% | 243d |  |
| 35 | 2.1 | **Document requirements** | 32d | 2010-11-01 A | 2010-12-14 |  | 97% | 286.5d |  |
| 36 |  | Identify physical requirements | 28d | 2010-11-01 A | 2010-12-08 A |  | 100% |  |  |
| 37 |  | Draft the budget | 10d | 2010-11-30 A | 2010-12-13 A | 36FS-2.5% | 100% |  |  |
| 38 |  | Review requirements and budget | 1d | 2010-12-14 | 2010-12-14 | 37 |  | 286.5d |  |
| 39 | 2.2 | **Choose new location** | 75.5d | 2010-11-01 A | 2011-02-14 |  | 68% | 243d |  |
| 40 | 2.2.1 | **Evaluate build sites** | 0d | 2010-11-01 | 2010-11-01 |  |  | 318.5d |  |
| 41 |  | Identify potential build sites | 20d | 2010-11-01 | 2010-11-26 |  |  | 198.5d |  |
| 42 |  | Identify construction needs | 30d | 2010-11-29 | 2011-01-07 | 41 |  | 198.5d |  |
| 43 |  | Select site | 10d | 2011-01-10 | 2011-01-21 | 42 |  | 198.5d |  |
| 44 |  | Finalize purchase | 60d | 2011-01-24 | 2011-04-15 | 43 |  | 198.5d |  |
| 45 | 2.2.2 | **Evaluate lease sites** | 47.5d | 2010-12-09 A | 2011-02-14 |  | 68% | 0d |  |
| 46 |  | Identify potential sites | 20d | 2010-12-09 A | 2011-01-05 A | 36 | 100% |  |  |
| 47 |  | Identify tenant improvements | 7.5d | 2011-01-06 A | 2011-01-17 A | 46 | 100% |  |  |
| 48 |  | Select site | 10d | 2011-01-17 A | 2011-01-31 | 47, 37 | 50% | 0d |  |
| 49 |  | Finalize lease | 10d | 2011-01-31 | 2011-02-14 | 48 |  | 0d |  |
| 50 | 2.3 | **Identify costs** | 20d | 2011-01-17 A | 2011-02-14 |  | 25% |  |  |
| 51 |  | Obtain estimates for tenant improvements | 10d | 2011-01-17 A | 2011-01-31 | 47 | 50% | 5d |  |
| 52 |  | Identify additional costs (furniture, equipment) | 10d | 2011-01-31 | 2011-02-14 | 48 |  | 0d |  |
| 53 |  | Hire contractors for major tenant improvements | 5d | 2011-01-31 | 2011-02-07 | 51 |  | 5d |  |
| 54 |  | Planning complete | 0d | 2011-02-14 | 2011-02-14 | 46, 48, 49, 47, 52, 53 |  | 0d |  |
| 55 | 3 | **Construct and set up space** | 225d? | 2011-02-14 | 2011-12-26 | 54 |  |  |  |
| 56 | 3.1 | **Prep phone system** | 5d? | 2011-02-14 | 2011-02-21 | 54 |  | 220d |  |
| 57 |  | Review phone system requirements | 3d | 2011-02-14 | 2011-02-17 |  |  | 220d |  |
| 58 |  | Order new phone numbers | 1d | 2011-02-17 | 2011-02-18 | 57 |  | 220d |  |
| 59 |  | Order long-distance service | 1d? | 2011-02-18 | 2011-02-21 | 58 |  | 220d |  |
| 60 |  | Phone lines ordered | 0d | 2011-02-21 | 2011-02-21 | 59 |  | 220d |  |
| 61 | 3.2 | **Design and construction** | 93d? | 2011-02-14 | 2011-06-23 |  |  | 132d |  |
| 62 | 3.2.1 | **Design space** | 66d? | 2011-02-14 | 2011-05-17 |  |  | 132d |  |
| 63 |  | Design office space | 25d? | 2011-02-14 | 2011-03-21 | 54 |  | 132d |  |
| 64 |  | Prepare drawings | 5d | 2011-03-21 | 2011-03-28 | 63 |  | 132d |  |
| 65 |  | Design IT infrastructure | 10d | 2011-03-28 | 2011-04-11 | 64 |  | 132d |  |
| 66 |  | Obtain final budget estimates | 10d | 2011-04-11 | 2011-04-25 | 65 |  | 132d |  |
| 67 |  | Sign off on plans | 1d | 2011-04-25 | 2011-04-26 | 66 |  | 132d |  |
| 68 |  | Obtain permits | 3w | 2011-04-26 | 2011-05-17 | 67 |  | 132d |  |
| 69 | 3.2.2 | **Construction** | 20d | 2011-05-17 | 2011-06-14 | 68 |  | 132d |  |
| 70 |  | Demolish walls | 5d | 2011-05-17 | 2011-05-24 |  |  | 132d |  |

| ID | WBS | Task | Duration | Start | Finish | Predecessors | Total float | Constraint |
| --- | --- | --- | --- | --- | --- | --- | --- | --- |
| 71 |  | Construct new walls | 15d | 2011-05-24 | 2011-06-14 | 70 | 132d |  |
| 72 |  | Elec, mech, HVAC | 15d | 2011-05-24 | 2011-06-14 | 70 | 132d |  |
| 73 | 3.2.3 | **Walkthrough and repair** | 7d | 2011-06-14 | 2011-06-23 | 72, 71 | 132d |  |
| 74 |  | Repair issues | 5d | 2011-06-14 | 2011-06-21 |  | 132d |  |
| 75 |  | Schedule open house for employees | 1d | 2011-06-14 | 2011-06-15 |  | 138d |  |
| 76 |  | Clean new office | 1d | 2011-06-21 | 2011-06-22 | 74 | 132d |  |
| 77 |  | Construction complete | 0d | 2011-06-22 | 2011-06-22 | 76 | 132d |  |
| 78 |  | Open house | 1d | 2011-06-22 | 2011-06-23 | 77 | 132d |  |
| 79 | 3.3 | **Set up services** | 10d | 2011-04-11 | 2011-04-25 | 54FS+2mo | 0d |  |
| 80 |  | Order change of address labels | 1d | 2011-04-11 | 2011-04-12 |  | 9d |  |
| 81 |  | Obtain estimates from signage companies | 7d | 2011-04-11 | 2011-04-20 |  | 0d |  |
| 82 |  | Order signage | 3d | 2011-04-20 | 2011-04-25 | 81 | 0d |  |
| 83 |  | Arrange external maintenance | 5d | 2011-04-11 | 2011-04-18 |  | 5d |  |
| 84 |  | Arrange for trash disposal | 1d | 2011-04-11 | 2011-04-12 |  | 9d |  |
| 85 |  | Arrange for cleaning service | 1d | 2011-04-11 | 2011-04-12 |  | 9d |  |
| 86 |  | Arrange for recycling | 1d | 2011-04-11 | 2011-04-12 |  | 9d |  |
| 87 |  | Order security system | 2d | 2011-04-11 | 2011-04-13 |  | 8d |  |
| 88 |  | Send change of address to vendors, customers, supscriptions | 1d | 2011-04-11 | 2011-04-12 |  | 9d |  |
| 89 |  | Notify all leasers of equipment move | 1d | 2011-04-11 | 2011-04-12 |  | 9d |  |
| 90 |  | Order checks with new address | 1d | 2011-04-11 | 2011-04-12 |  | 9d |  |
| 91 |  | Schedule disconnection of utilities | 1d | 2011-04-11 | 2011-04-12 |  | 9d |  |
| 92 |  | Service setup complete | 0d | 2011-04-25 | 2011-12-26 | 79 | 0d | start no earlier than 2010-09-20 |
| 93 | 3.5 | **Create office assignment layout** | 31d | 2011-02-14 | 2011-03-29 |  | 194d |  |
| 94 |  | Assign office spaces | 5d | 2011-03-21 | 2011-03-28 | 63 | 193d |  |
| 95 |  | Assign new phone numbers, extensions | 2d | 2011-02-14 | 2011-02-16 |  | 221d |  |
| 96 |  | Create new office extension directory | 1d | 2011-02-16 | 2011-02-17 | 95 | 221d |  |
| 97 |  | Create new office layout map | 1d | 2011-03-28 | 2011-03-29 | 94 | 193d |  |
| 98 |  | Create new fax cover sheet | 1d | 2011-02-17 | 2011-02-18 | 96 | 221d |  |
| 99 |  | Office plan complete | 0d | 2011-03-29 | 2011-03-29 | 97, 96 | 193d |  |
| 100 | 3.6 | **Order new stationery** | 1d | 2011-03-29 | 2011-03-30 | 99 | 193d |  |
| 101 |  | Order new letterhead and envelopes | 1d | 2011-03-29 | 2011-03-30 |  | 193d |  |
| 102 |  | Order new business cards | 1d | 2011-03-29 | 2011-03-30 |  | 193d |  |
| 103 |  | Order new business forms | 1d | 2011-03-29 | 2011-03-30 |  | 193d |  |
| 104 |  | Get shipping labels | 1d | 2011-03-29 | 2011-03-30 |  | 193d |  |
| 105 |  | Create map to location | 1d | 2011-03-29 | 2011-03-30 |  | 193d |  |
| 106 |  | Notify post office of change of address | 1d | 2011-03-29 | 2011-03-30 |  | 193d |  |
| 107 |  | Update company website with new information | 1d | 2011-03-29 | 2011-03-30 |  | 193d |  |
| 108 | 3.7 | **Hire movers** | 13d | 2011-03-14 | 2011-03-31 | 54FS+1mo | 192d |  |
| 109 |  | Obtain estimates from moving companies | 12d | 2011-03-14 | 2011-03-30 |  | 192d |  |
| 110 |  | Choose moving company | 1d | 2011-03-30 | 2011-03-31 | 109 | 192d |  |
| 111 | 3.8 | **Obtain insurance** | 10d | 2011-02-14 | 2011-02-28 |  | 215d |  |
| 112 |  | Appraise assets | 3d | 2011-02-14 | 2011-02-17 |  | 215d |  |
| 113 |  | Obtain quotes for insurance | 6d | 2011-02-17 | 2011-02-25 | 112 | 215d |  |
| 114 |  | Purchase insurance | 1d | 2011-02-25 | 2011-02-28 | 113 | 215d |  |
| 115 |  | Construction and prep complete | 0d | 2011-12-26 | 2011-12-26 | 55, 92, 110, 114, 93 | 0d |  |
| 116 | 5 | **Move** | 9d | 2011-12-26 | 2012-01-06 | 115 | 0d |  |
| 117 |  | Inventory office | 5d | 2011-12-26 | 2012-01-02 |  | 0d |  |
| 118 |  | Distribute new keys, cards | 1d | 2011-12-26 | 2011-12-27 |  | 8d |  |
| 119 |  | Collect old keys, cards | 1d | 2011-12-26 | 2011-12-27 |  | 4d |  |
| 120 |  | Pack and move | 4d | 2012-01-02 | 2012-01-06 | 119, 117 | 0d |  |
| 121 |  | Move complete | 0d | 2012-01-06 | 2012-01-06 | 95, 117, 118, 101, 102, 103, 74, 76, 106, 107, 91, 120 | 0d |  |
| 122 | 6 | **Pre-move tasks** | 4d | 2011-12-26 | 2011-12-30 | 116SS | 14d |  |
| 123 |  | Install phone system | 4d | 2011-12-26 | 2011-12-30 | 60 | 14d |  |
| 124 | 7 | **Post-Move** | 9d | 2012-01-06 | 2012-01-19 | 121 | 0d |  |
| 125 |  | Check for damage and missing items | 9d | 2012-01-06 | 2012-01-19 |  | 0d |  |
| 126 |  | Schedule phone training | 1d | 2012-01-06 | 2012-01-09 |  | 8d |  |
| 127 |  | Schedule security training | 1d | 2012-01-06 | 2012-01-09 |  | 8d |  |
| 128 |  | Schedule fire drill | 1d | 2012-01-06 | 2012-01-09 |  | 8d |  |
| 129 |  | Schedule open house for clients | 1d | 2012-01-06 | 2012-01-09 |  | 8d |  |
| 130 |  | Office move complete | 0d | 2012-01-19 | 2012-01-19 | 121, 125, 126, 127, 128, 129 | 0d |  |

## Version 2 (saved 2010-07-28, file OfficeMove_Group.mpp)

Note of the change: commit con wordpress

Last finish 2012-01-19 → 2012-02-09 (+21d). Complete tasks 7 → 0.

Added:

| ID | Task | Duration | Start | Finish | Predecessors | Resources |
| --- | --- | --- | --- | --- | --- | --- |
| 5 | **Mgt meeting** | 6d | 2010-12-10 | 2010-12-17 |  |  |
| 6 | Prepare mgt presentation | 3d | 2010-12-10 | 2010-12-14 | 4 | Relo PM [25%] |
| 7 | Prepare materials | 2d | 2010-12-15 | 2010-12-16 | 6 | Relo Assistant [25%]; Relo PM [25%] |
| 8 | Present to mgt | 4h | 2010-12-17 | 2010-12-17 | 7 |  |

Removed: 1 Mgt meetings; 2 Mgt meetings 1; 3 Mgt meetings 2; 4 Mgt meetings 3; 5 Mgt meetings 4; 6 Mgt meetings 5; 7 Mgt meetings 6; 8 Mgt meetings 7; 9 Mgt meetings 8; 10 Mgt meetings 9; 11 Mgt meetings 10; 12 Mgt meetings 11; 13 Mgt meetings 12; 14 Mgt meetings 13; 15 Mgt meetings 14; 16 Mgt meetings 15; 17 Mgt meetings 16; 18 Mgt meetings 17; 19 Mgt meetings 18; 20 Mgt meetings 19; 21 Mgt meetings 20; 22 Mgt meetings 21; 23 Mgt meetings 22; 24 Mgt meetings 23; 25 Mgt meetings 24; 26 Mgt meetings 25; 27 Mgt meetings 26; 28 Mgt meetings 27; 29 Mgt meetings 28; 30 Mgt meetings 29; 31 Mgt meetings 30; 32 Mgt meetings 31; 33 Mgt meetings 32; 38 Review requirements and budget; 55 Construct and set up space; 119 Collect old keys, cards

Changed:

| ID | Task | Start | Finish | Duration | Complete | Total float | Predecessors | Other |
| --- | --- | --- | --- | --- | --- | --- | --- | --- |
| 1 | **Planning Move** | 2010-11-01 A → 2010-11-01 | 2011-02-14 → 2011-03-18 (+32d) | 75.5d → 100d | 68% → 0% | 243d → 0d |  |  |
| 2 | **Document requirements** | 2010-11-01 A → 2010-11-01 | 2010-12-14 → 2010-12-17 (+3d) | 32d → 35d | 97% → 0% | 286.5d → 0d |  |  |
| 3 | Identify physical requirements | 2010-11-01 A → 2010-11-01 | 2010-12-08 A → 2010-11-26 (-12d) | 28d → 20d | 100% → 0% | none → 0d |  | resources Relo PM → Relo PM [50%]; Relo Assistant [50%]; Office manager [50%] |
| 4 | Draft the budget | 2010-11-30 A → 2010-11-22 (-8d) | 2010-12-13 A → 2010-12-03 (-10d) |  | 100% → 0% | none → 0d |  | resources Relo PM → Relo PM [50%]; Relo Assistant [50%] |
| 9 | **Choose new location** | 2010-11-01 A → 2010-12-06 (+35d) | 2011-02-14 → 2011-03-04 (+18d) | 75.5d → 65d | 68% → 0% | 243d → 0d |  |  |
| 10 | **Evaluate build sites** |  | 2010-11-01 → 2011-05-11 (+191d) | 0d → 138d |  | 318.5d → -43d |  |  |
| 11 | Identify potential build sites |  | 2010-11-26 → 2010-12-03 (+7d) | 20d → 25d |  | 198.5d → -43d |  |  |
| 12 | Identify construction needs | 2010-11-29 → 2010-12-06 (+7d) | 2011-01-07 → 2011-02-02 (+26d) |  |  | 198.5d → -56d |  |  |
| 13 | Select site | 2011-01-10 → 2011-02-03 (+24d) | 2011-01-21 → 2011-02-16 (+26d) |  |  | 198.5d → -56d |  |  |
| 14 | Finalize purchase | 2011-01-24 → 2011-02-17 (+24d) | 2011-04-15 → 2011-05-11 (+26d) |  |  | 198.5d → -56d |  |  |
| 15 | **Evaluate lease sites** | 2010-12-09 A → 2010-12-06 (-3d) | 2011-02-14 → 2011-03-04 (+18d) | 47.5d → 65d | 68% → 0% |  |  |  |
| 16 | Identify potential sites | 2010-12-09 A → 2010-12-06 (-3d) | 2011-01-05 A → 2011-01-19 (+14d) | 20d → 25d | 100% → 0% | none → 0d | 3 → 4 | resources Relo PM → Relo PM [50%]; Relo Assistant [50%] |
| 17 | Identify tenant improvements | 2011-01-06 A → 2011-01-20 (+14d) | 2011-01-17 A → 2011-01-28 (+11d) | 7.5d → 7d | 100% → 0% | none → 5d |  | resources Office manager; Relo PM → Relo PM [50%]; Relo Assistant [50%] |
| 18 | Select site | 2011-01-17 A → 2011-01-31 (+14d) | 2011-01-31 → 2011-02-11 (+11d) |  | 50% → 0% | 0d → 5d |  |  |
| 19 | Finalize lease | 2011-01-31 → 2011-02-14 (+14d) | 2011-02-14 → 2011-03-04 (+18d) |  |  | 0d → 5d |  |  |
| 20 | **Identify costs** | 2011-01-17 A → 2011-01-20 (+3d) | 2011-02-14 → 2011-03-18 (+32d) | 20d → 42d | 25% → 0% | none → 0d |  |  |
| 21 | Estimate costs for tenant improvements | 2011-01-17 A → 2011-01-31 (+14d) | 2011-01-31 → 2011-02-11 (+11d) |  | 50% → 0% | 5d → 218d |  | was named Obtain estimates for tenant improvements; resources Office manager → Office manager; Relo Assistant |
| 22 | Identify addl costs (furniture, equipment) | 2011-01-31 → 2011-01-20 (-11d) | 2011-02-14 → 2011-03-11 (+25d) | 10d → 20d |  |  | 18 → 16 | was named Identify additional costs (furniture, equipment); resources Relo PM → Relo Assistant [50%] |
| 23 | Inventory office | 2011-12-26 → 2011-01-31 (-329d) | 2012-01-02 → 2011-03-18 (-290d) | 5d → 25d |  | 0d → 220d | none → 17 | resources Office manager → Office manager [50%] |
| 24 | Planning complete | 2011-02-14 → 2011-03-11 (+25d) | 2011-02-14 → 2011-03-11 (+25d) |  |  |  | 16, 18, 19, 17, 22, 25 → 16, 18, 19, 17, 22, 14 |  |
| 25 | Hire contractors for tenant improvements | 2011-01-31 → 2011-02-14 (+14d) | 2011-02-07 → 2011-02-18 (+11d) |  |  | 5d → 218d |  | was named Hire contractors for major tenant improvements |
| 26 | **Prep phone system** | 2011-02-14 → 2011-03-14 (+28d) | 2011-02-21 → 2012-01-20 (+333d) | 5d? → 225d |  | 220d → 14d |  |  |
| 27 | Review phone system requirements | 2011-02-14 → 2011-03-14 (+28d) | 2011-02-17 → 2011-03-16 (+27d) |  |  | 220d → 230d |  |  |
| 28 | Order new phone numbers | 2011-02-17 → 2011-03-17 (+28d) | 2011-02-18 → 2011-03-17 (+27d) |  |  | 220d → 230d |  |  |
| 29 | Order long-distance service | 2011-02-18 → 2011-03-18 (+28d) | 2011-02-21 → 2011-03-18 (+25d) | 1d? → 1d |  | 220d → 230d |  |  |
| 30 | Phone lines ordered | 2011-02-21 → 2011-03-18 (+25d) | 2011-02-21 → 2011-03-18 (+25d) |  |  | 220d → 230d |  |  |
| 31 | **Design and construction** | 2011-02-14 → 2011-03-14 (+28d) | 2011-06-23 → 2011-07-05 (+12d) | 93d? → 81.75d |  | 132d → 148.25d |  |  |
| 32 | **Design space** | 2011-02-14 → 2011-03-14 (+28d) | 2011-05-17 → 2011-05-27 (+10d) | 66d? → 54.75d |  | 132d → 148.25d |  |  |
| 33 | Design office space | 2011-02-14 → 2011-03-14 (+28d) | 2011-03-21 → 2011-03-31 (+10d) | 25d? → 13.75d |  | 132d → 148.25d |  | resources Office manager [50%]; Architect → Architect |
| 34 | Prepare drawings | 2011-03-21 → 2011-03-31 (+10d) | 2011-03-28 → 2011-04-07 (+10d) |  |  | 132d → 148.25d |  |  |
| 35 | Design IT infrastructure | 2011-03-28 → 2011-04-07 (+10d) | 2011-04-11 → 2011-04-21 (+10d) |  |  | 132d → 148.25d |  |  |
| 36 | Obtain final budget estimates | 2011-04-11 → 2011-04-21 (+10d) | 2011-04-25 → 2011-05-05 (+10d) |  |  | 132d → 148.25d |  |  |
| 37 | Sign off on plans | 2011-04-25 → 2011-05-05 (+10d) | 2011-04-26 → 2011-05-06 (+10d) |  |  | 132d → 148.25d |  |  |
| 38 | Obtain permits | 2011-04-26 → 2011-05-06 (+10d) | 2011-05-17 → 2011-05-27 (+10d) |  |  | 132d → 148.25d |  |  |
| 39 | **Construction** | 2011-05-17 → 2011-05-27 (+10d) | 2011-06-14 → 2011-06-24 (+10d) |  |  | 132d → 148.25d |  |  |
| 40 | Demolish walls | 2011-05-17 → 2011-05-27 (+10d) | 2011-05-24 → 2011-06-03 (+10d) |  |  | 132d → 148.25d | none → 25 |  |
| 41 | Construct new walls | 2011-05-24 → 2011-06-03 (+10d) | 2011-06-14 → 2011-06-24 (+10d) |  |  | 132d → 148.25d |  |  |
| 42 | Elec, mech, HVAC | 2011-05-24 → 2011-06-03 (+10d) | 2011-06-14 → 2011-06-24 (+10d) |  |  | 132d → 148.25d |  |  |
| 43 | **Walkthrough and repair** | 2011-06-14 → 2011-06-24 (+10d) | 2011-06-23 → 2011-07-05 (+12d) |  |  | 132d → 148.25d |  |  |
| 44 | Repair issues | 2011-06-14 → 2011-06-24 (+10d) | 2011-06-21 → 2011-07-01 (+10d) |  |  | 132d → 148.25d |  |  |
| 45 | Schedule open house for employees | 2011-06-14 → 2011-06-24 (+10d) | 2011-06-15 → 2011-06-27 (+12d) |  |  | 138d → 163.25d |  |  |
| 46 | Clean new office | 2011-06-21 → 2011-07-01 (+10d) | 2011-06-22 → 2011-07-04 (+12d) |  |  | 132d → 148.25d |  |  |
| 47 | Construction complete | 2011-06-22 → 2011-07-04 (+12d) | 2011-06-22 → 2011-07-04 (+12d) |  |  | 132d → 157.25d |  |  |
| 48 | Open house | 2011-06-22 → 2011-07-04 (+12d) | 2011-06-23 → 2011-07-05 (+12d) |  |  | 132d → 157.25d |  |  |
| 49 | **Set up services** | 2011-04-11 → 2011-05-09 (+28d) | 2011-04-25 → 2011-05-20 (+25d) |  |  |  |  |  |
| 50 | Order change of address labels | 2011-04-11 → 2011-05-09 (+28d) | 2011-04-12 → 2011-05-09 (+27d) |  |  |  |  |  |
| 51 | Obtain estimates from signage companies | 2011-04-11 → 2011-05-09 (+28d) | 2011-04-20 → 2011-05-17 (+27d) |  |  |  |  |  |
| 52 | Order signage | 2011-04-20 → 2011-05-18 (+28d) | 2011-04-25 → 2011-05-20 (+25d) |  |  |  |  |  |
| 53 | Arrange external maintenance | 2011-04-11 → 2011-05-09 (+28d) | 2011-04-18 → 2011-05-13 (+25d) |  |  |  |  |  |
| 54 | Arrange for trash disposal | 2011-04-11 → 2011-05-09 (+28d) | 2011-04-12 → 2011-05-09 (+27d) |  |  |  |  |  |
| 55 | Arrange for cleaning service | 2011-04-11 → 2011-05-09 (+28d) | 2011-04-12 → 2011-05-09 (+27d) |  |  |  |  |  |
| 56 | Arrange for recycling | 2011-04-11 → 2011-05-09 (+28d) | 2011-04-12 → 2011-05-09 (+27d) |  |  |  |  |  |
| 57 | Order security system | 2011-04-11 → 2011-05-09 (+28d) | 2011-04-13 → 2011-05-10 (+27d) |  |  |  |  |  |
| 58 | Send change of address to vendors, customers, supscriptions | 2011-04-11 → 2011-05-09 (+28d) | 2011-04-12 → 2011-05-09 (+27d) |  |  |  |  |  |
| 59 | Notify all leasers of equipment move | 2011-04-11 → 2011-05-09 (+28d) | 2011-04-12 → 2011-05-09 (+27d) |  |  |  |  |  |
| 60 | Order checks with new address | 2011-04-11 → 2011-05-09 (+28d) | 2011-04-12 → 2011-05-09 (+27d) |  |  |  |  |  |
| 61 | Schedule disconnection of utilities | 2011-04-11 → 2011-05-09 (+28d) | 2011-04-12 → 2011-05-09 (+27d) |  |  |  |  |  |
| 62 | Service setup complete | 2011-04-25 → 2011-05-20 (+25d) | 2011-12-26 → 2012-01-20 (+25d) |  |  |  |  |  |
| 63 | **Create office assignment layout** | 2011-02-14 → 2011-03-31 (+45d) | 2011-03-29 → 2011-04-12 (+14d) | 31d → 8.12d |  | 194d → 203.12d |  |  |
| 64 | Assign office spaces | 2011-03-21 → 2011-03-31 (+10d) | 2011-03-28 → 2011-04-07 (+10d) |  |  | 193d → 203.12d |  |  |
| 65 | Assign new phone numbers, extensions | 2011-02-14 → 2011-04-07 (+52d) | 2011-02-16 → 2011-04-11 (+54d) |  |  | 221d → 203.12d | none → 64 |  |
| 66 | Create new office extension directory | 2011-02-16 → 2011-04-11 (+54d) | 2011-02-17 → 2011-04-12 (+54d) |  |  | 221d → 203.12d |  |  |
| 67 | Create new office layout map | 2011-03-28 → 2011-04-07 (+10d) | 2011-03-29 → 2011-04-08 (+10d) |  |  | 193d → 205.25d |  |  |
| 68 | Create new fax cover sheet | 2011-02-17 → 2011-04-12 (+54d) | 2011-02-18 → 2011-04-12 (+53d) | 1d → 0.12d |  | 221d → 203.12d |  |  |
| 69 | Office plan complete | 2011-03-29 → 2011-04-12 (+14d) | 2011-03-29 → 2011-04-12 (+14d) |  |  | 193d → 203.12d | 67, 66 → 67, 66, 68 |  |
| 70 | **Order new stationery** | 2011-03-29 → 2011-04-12 (+14d) | 2011-03-30 → 2011-04-14 (+15d) | 1d → 1.5d |  | 193d → 205.62d |  |  |
| 71 | Order new letterhead and envelopes | 2011-03-29 → 2011-04-12 (+14d) | 2011-03-30 → 2011-04-13 (+14d) | 1d → 0.25d |  | 193d → 205.62d |  |  |
| 72 | Order new business cards | 2011-03-29 → 2011-04-13 (+15d) | 2011-03-30 → 2011-04-13 (+14d) | 1d → 0.25d |  | 193d → 205.62d | none → 71 |  |
| 73 | Order new business forms | 2011-03-29 → 2011-04-13 (+15d) | 2011-03-30 → 2011-04-13 (+14d) | 1d → 0.25d |  | 193d → 205.62d | none → 72 |  |
| 74 | Get shipping labels | 2011-03-29 → 2011-04-13 (+15d) | 2011-03-30 → 2011-04-13 (+14d) | 1d → 0.25d |  | 193d → 205.62d | none → 73 | resources none → Office manager |

| ID | Task | Start | Finish | Duration | Total float | Predecessors | Other |
| --- | --- | --- | --- | --- | --- | --- | --- |
| 75 | Create map to location | 2011-03-29 → 2011-04-13 (+15d) | 2011-03-30 → 2011-04-14 (+15d) | 1d → 0.25d | 193d → 205.62d | none → 74 |  |
| 76 | Notify post office of change of address | 2011-03-29 → 2011-04-14 (+16d) | 2011-03-30 → 2011-04-14 (+15d) | 1d → 0.25d | 193d → 205.62d | none → 75 |  |
| 77 | Update company website with new information | 2011-03-29 → 2011-04-12 (+14d) | 2011-03-30 → 2011-04-13 (+14d) |  | 193d → 206.12d |  |  |
| 78 | **Hire movers** | 2011-03-14 → 2011-04-11 (+28d) | 2011-03-31 → 2011-04-27 (+27d) |  |  |  |  |
| 79 | Obtain estimates from moving companies | 2011-03-14 → 2011-04-11 (+28d) | 2011-03-30 → 2011-04-26 (+27d) |  |  |  |  |
| 80 | Choose moving company | 2011-03-30 → 2011-04-27 (+28d) | 2011-03-31 → 2011-04-27 (+27d) |  |  |  |  |
| 81 | **Obtain insurance** | 2011-02-14 → 2011-03-14 (+28d) | 2011-02-28 → 2011-03-30 (+30d) | 10d → 13d | 215d → 212d |  |  |
| 82 | Appraise assets | 2011-02-14 → 2011-03-14 (+28d) | 2011-02-17 → 2011-03-16 (+27d) |  | 215d → 212d |  |  |
| 83 | Obtain quotes for insurance | 2011-02-17 → 2011-03-17 (+28d) | 2011-02-25 → 2011-03-29 (+32d) | 6d → 1d | 215d → 212d |  |  |
| 84 | Purchase insurance | 2011-02-25 → 2011-03-30 (+33d) | 2011-02-28 → 2011-03-30 (+30d) |  | 215d → 212d |  |  |
| 85 | Construction and prep complete | 2011-12-26 → 2012-01-20 (+25d) | 2011-12-26 → 2012-01-20 (+25d) |  |  | Construct and set up space, 62, 80, 84, 63 → 62, 80, 84, 63 |  |
| 86 | **Move** | 2011-12-26 → 2012-01-23 (+28d) | 2012-01-06 → 2012-01-26 (+20d) | 9d → 4d |  |  |  |
| 87 | Distribute new keys, cards | 2011-12-26 → 2012-01-23 (+28d) | 2011-12-27 → 2012-01-23 (+27d) |  | 8d → 3d |  |  |
| 88 | Pack and move | 2012-01-02 → 2012-01-23 (+21d) | 2012-01-06 → 2012-01-26 (+20d) |  |  | Collect old keys, cards, 23 → 23 |  |
| 89 | Move complete | 2012-01-06 → 2012-01-26 (+20d) | 2012-01-06 → 2012-01-26 (+20d) |  |  |  |  |
| 90 | **Pre-move tasks** | 2011-12-26 → 2012-01-23 (+28d) | 2011-12-30 → 2012-01-26 (+27d) |  | 14d → 10d |  |  |
| 91 | Install phone system | 2011-12-26 → 2012-01-23 (+28d) | 2011-12-30 → 2012-01-26 (+27d) |  | 14d → 10d |  |  |
| 92 | **Post-Move** | 2012-01-06 → 2012-01-27 (+21d) | 2012-01-19 → 2012-02-09 (+21d) | 9d → 10d |  |  |  |
| 93 | Check for damage and missing items | 2012-01-06 → 2012-01-27 (+21d) | 2012-01-19 → 2012-02-09 (+21d) | 9d → 10d |  |  | resources Office manager → Office manager [50%]; Relo Assistant [50%] |
| 94 | Schedule phone training | 2012-01-06 → 2012-01-27 (+21d) | 2012-01-09 → 2012-01-27 (+18d) |  | 8d → 9d |  |  |
| 95 | Schedule security training | 2012-01-06 → 2012-01-27 (+21d) | 2012-01-09 → 2012-01-27 (+18d) |  | 8d → 9d |  | resources Office manager → Office manager [50%] |
| 96 | Schedule fire drill | 2012-01-06 → 2012-01-27 (+21d) | 2012-01-09 → 2012-01-27 (+18d) |  | 8d → 9d |  | resources Office manager → Office manager [50%] |
| 97 | Schedule open house for clients | 2012-01-06 → 2012-01-27 (+21d) | 2012-01-09 → 2012-01-27 (+18d) |  | 8d → 9d |  |  |
| 98 | Office move complete | 2012-01-19 → 2012-02-09 (+21d) | 2012-01-19 → 2012-02-09 (+21d) |  |  |  |  |

## Version 3 (saved 2010-07-28, file OfficeMove_Timeline.mpp)

Note of the change: commit con wordpress

Last finish 2012-02-09 → 2011-12-26 (-45d). Complete tasks 0 → 4.

Added:

| ID | Task | Duration | Start | Finish | Predecessors | Resources |
| --- | --- | --- | --- | --- | --- | --- |
| 17 | Obtain estimates for tenant improvements | 10d | 2011-01-17 A | 2011-01-31 | 13 | Office manager |
| 18 | Identify additional costs (furniture, equipment) | 10d | 2011-01-31 | 2011-02-14 | 14 | Relo PM |
| 19 | Hire contractors for major tenant improvements | 5d | 2011-01-31 | 2011-02-07 | 17 | Relo PM |
| 21 | **Construct and set up space** | 225d? | 2011-02-14 | 2011-12-26 | 20 |  |
| 85 | Collect old keys, cards | 1d | 2011-03-03 | 2011-03-04 |  | Office manager |

Removed: 5 Mgt meeting; 6 Prepare mgt presentation; 7 Prepare materials; 8 Present to mgt; 21 Estimate costs for tenant improvements; 22 Identify addl costs (furniture, equipment); 25 Hire contractors for tenant improvements

Changed:

| ID | Task | Start | Finish | Duration | Complete | Total float | Predecessors | Other |
| --- | --- | --- | --- | --- | --- | --- | --- | --- |
| 1 | **Planning Move** | 2010-11-01 → 2010-07-17 A (-107d) | 2011-03-18 → 2011-02-14 (-32d) | 100d → 150.5d | 0% → 68% | 0d → 225d |  |  |
| 2 | **Document requirements** | 2010-11-01 A | 2010-12-17 → 2010-12-13 A (-4d) | 35d → 31d | 0% → 100% | 0d → none |  |  |
| 3 | Identify physical requirements | 2010-11-01 A | 2010-11-26 → 2010-12-08 A (+12d) | 20d → 28d | 0% → 100% | 0d → none |  | resources Relo PM [50%]; Relo Assistant [50%]; Office manager [50%] → Relo PM |
| 4 | Draft the budget | 2010-11-22 → 2010-11-30 A (+8d) | 2010-12-03 → 2010-12-13 A (+10d) |  | 0% → 100% | 0d → none |  | resources Relo PM [50%]; Relo Assistant [50%] → Relo PM |
| 5 | **Choose new location** | 2010-12-06 → 2010-07-17 A (-142d) | 2011-03-04 → 2011-02-14 (-18d) | 65d → 150.5d | 0% → 68% | 0d → 225d |  |  |
| 6 | **Evaluate build sites** | 2010-11-01 → 2010-07-17 (-107d) | 2011-05-11 → 2010-07-17 (-298d) | 138d → 0d |  | -43d → 375.5d |  |  |
| 7 | Identify potential build sites | 2010-11-01 → 2010-07-19 (-105d) | 2010-12-03 → 2010-08-13 (-112d) | 25d → 20d |  | -43d → 255.5d |  |  |
| 8 | Identify construction needs | 2010-12-06 → 2010-08-16 (-112d) | 2011-02-02 → 2010-09-24 (-131d) |  |  | -56d → 255.5d |  |  |
| 9 | Select site | 2011-02-03 → 2010-09-27 (-129d) | 2011-02-16 → 2010-10-08 (-131d) |  |  | -56d → 255.5d |  |  |
| 10 | Finalize purchase | 2011-02-17 → 2010-10-11 (-129d) | 2011-05-11 → 2010-12-31 (-131d) |  |  | -56d → 255.5d |  |  |
| 11 | **Evaluate lease sites** | 2010-12-06 → 2010-12-09 A (+3d) | 2011-03-04 → 2011-02-14 (-18d) | 65d → 47.5d | 0% → 68% |  |  |  |
| 12 | Identify potential sites | 2010-12-06 → 2010-12-09 A (+3d) | 2011-01-19 → 2011-01-05 A (-14d) | 25d → 20d | 0% → 100% | 0d → none | 4 → 3 | resources Relo PM [50%]; Relo Assistant [50%] → Relo PM |
| 13 | Identify tenant improvements | 2011-01-20 → 2011-01-06 A (-14d) | 2011-01-28 → 2011-01-17 A (-11d) | 7d → 7.5d | 0% → 100% | 5d → none |  | resources Relo PM [50%]; Relo Assistant [50%] → Office manager; Relo PM |
| 14 | Select site | 2011-01-31 → 2011-01-17 A (-14d) | 2011-02-11 → 2011-01-31 (-11d) |  | 0% → 50% | 5d → 0d |  |  |
| 15 | Finalize lease | 2011-02-14 → 2011-01-31 (-14d) | 2011-03-04 → 2011-02-14 (-18d) |  |  | 5d → 0d |  |  |
| 16 | **Identify costs** | 2011-01-20 → 2011-01-17 A (-3d) | 2011-03-18 → 2011-02-14 (-32d) | 42d → 20d | 0% → 25% |  |  |  |
| 20 | Planning complete | 2011-03-11 → 2011-02-14 (-25d) | 2011-03-11 → 2011-02-14 (-25d) |  |  |  | 12, 14, 15, 13, Identify addl costs (furniture, equipment), 10 → 12, 13, 14, 15, 18, 19 |  |
| 22 | **Prep phone system** | 2011-03-14 → 2011-02-14 (-28d) | 2012-01-20 → 2011-02-21 (-333d) | 225d → 5d? |  | 14d → 220d |  |  |
| 23 | Review phone system requirements | 2011-03-14 → 2011-02-14 (-28d) | 2011-03-16 → 2011-02-17 (-27d) |  |  | 230d → 220d |  |  |
| 24 | Order new phone numbers | 2011-03-17 → 2011-02-17 (-28d) | 2011-03-17 → 2011-02-18 (-27d) |  |  | 230d → 220d |  |  |
| 25 | Order long-distance service | 2011-03-18 → 2011-02-18 (-28d) | 2011-03-18 → 2011-02-21 (-25d) | 1d → 1d? |  | 230d → 220d |  |  |
| 26 | Phone lines ordered | 2011-03-18 → 2011-02-21 (-25d) | 2011-03-18 → 2011-02-21 (-25d) |  |  | 230d → 220d |  |  |
| 27 | **Design and construction** | 2011-03-14 → 2011-02-14 (-28d) | 2011-07-05 → 2011-06-23 (-12d) | 81.75d → 93d? |  | 148.25d → 132d |  |  |
| 28 | **Design space** | 2011-03-14 → 2011-02-14 (-28d) | 2011-05-27 → 2011-05-17 (-10d) | 54.75d → 66d? |  | 148.25d → 132d |  |  |
| 29 | Design office space | 2011-03-14 → 2011-02-14 (-28d) | 2011-03-31 → 2011-03-21 (-10d) | 13.75d → 25d? |  | 148.25d → 132d |  | resources Architect → Office manager [50%]; Architect |
| 30 | Prepare drawings | 2011-03-31 → 2011-03-21 (-10d) | 2011-04-07 → 2011-03-28 (-10d) |  |  | 148.25d → 132d |  |  |
| 31 | Design IT infrastructure | 2011-04-07 → 2011-03-28 (-10d) | 2011-04-21 → 2011-04-11 (-10d) |  |  | 148.25d → 132d |  |  |
| 32 | Obtain final budget estimates | 2011-04-21 → 2011-04-11 (-10d) | 2011-05-05 → 2011-04-25 (-10d) |  |  | 148.25d → 132d |  |  |
| 33 | Sign off on plans | 2011-05-05 → 2011-04-25 (-10d) | 2011-05-06 → 2011-04-26 (-10d) |  |  | 148.25d → 132d |  |  |
| 34 | Obtain permits | 2011-05-06 → 2011-04-26 (-10d) | 2011-05-27 → 2011-05-17 (-10d) |  |  | 148.25d → 132d |  |  |
| 35 | **Construction** | 2011-05-27 → 2011-05-17 (-10d) | 2011-06-24 → 2011-06-14 (-10d) |  |  | 148.25d → 132d |  |  |
| 36 | Demolish walls | 2011-05-27 → 2011-05-17 (-10d) | 2011-06-03 → 2011-05-24 (-10d) |  |  | 148.25d → 132d | Hire contractors for tenant improvements → none |  |
| 37 | Construct new walls | 2011-06-03 → 2011-05-24 (-10d) | 2011-06-24 → 2011-06-14 (-10d) |  |  | 148.25d → 132d |  |  |
| 38 | Elec, mech, HVAC | 2011-06-03 → 2011-05-24 (-10d) | 2011-06-24 → 2011-06-14 (-10d) |  |  | 148.25d → 132d |  |  |
| 39 | **Walkthrough and repair** | 2011-06-24 → 2011-06-14 (-10d) | 2011-07-05 → 2011-06-23 (-12d) |  |  | 148.25d → 132d |  |  |
| 40 | Repair issues | 2011-06-24 → 2011-06-14 (-10d) | 2011-07-01 → 2011-06-21 (-10d) |  |  | 148.25d → 132d |  |  |
| 41 | Schedule open house for employees | 2011-06-24 → 2011-06-14 (-10d) | 2011-06-27 → 2011-06-15 (-12d) |  |  | 163.25d → 138d |  |  |
| 42 | Clean new office | 2011-07-01 → 2011-06-21 (-10d) | 2011-07-04 → 2011-06-22 (-12d) |  |  | 148.25d → 132d |  |  |
| 43 | Construction complete | 2011-07-04 → 2011-06-22 (-12d) | 2011-07-04 → 2011-06-22 (-12d) |  |  | 157.25d → 132d |  |  |
| 44 | Open house | 2011-07-04 → 2011-06-22 (-12d) | 2011-07-05 → 2011-06-23 (-12d) |  |  | 157.25d → 132d |  |  |
| 45 | **Set up services** | 2011-05-09 → 2011-04-11 (-28d) | 2011-05-20 → 2011-04-25 (-25d) |  |  |  |  |  |
| 46 | Order change of address labels | 2011-05-09 → 2011-04-11 (-28d) | 2011-05-09 → 2011-04-12 (-27d) |  |  |  |  |  |
| 47 | Obtain estimates from signage companies | 2011-05-09 → 2011-04-11 (-28d) | 2011-05-17 → 2011-04-20 (-27d) |  |  |  |  |  |
| 48 | Order signage | 2011-05-18 → 2011-04-20 (-28d) | 2011-05-20 → 2011-04-25 (-25d) |  |  |  |  |  |
| 49 | Arrange external maintenance | 2011-05-09 → 2011-04-11 (-28d) | 2011-05-13 → 2011-04-18 (-25d) |  |  |  |  |  |
| 50 | Arrange for trash disposal | 2011-05-09 → 2011-04-11 (-28d) | 2011-05-09 → 2011-04-12 (-27d) |  |  |  |  |  |
| 51 | Arrange for cleaning service | 2011-05-09 → 2011-04-11 (-28d) | 2011-05-09 → 2011-04-12 (-27d) |  |  |  |  |  |
| 52 | Arrange for recycling | 2011-05-09 → 2011-04-11 (-28d) | 2011-05-09 → 2011-04-12 (-27d) |  |  |  |  |  |
| 53 | Order security system | 2011-05-09 → 2011-04-11 (-28d) | 2011-05-10 → 2011-04-13 (-27d) |  |  |  |  |  |
| 54 | Send change of address to vendors, customers, supscriptions | 2011-05-09 → 2011-04-11 (-28d) | 2011-05-09 → 2011-04-12 (-27d) |  |  |  |  |  |
| 55 | Notify all leasers of equipment move | 2011-05-09 → 2011-04-11 (-28d) | 2011-05-09 → 2011-04-12 (-27d) |  |  |  |  |  |
| 56 | Order checks with new address | 2011-05-09 → 2011-04-11 (-28d) | 2011-05-09 → 2011-04-12 (-27d) |  |  |  |  |  |
| 57 | Schedule disconnection of utilities | 2011-05-09 → 2011-04-11 (-28d) | 2011-05-09 → 2011-04-12 (-27d) |  |  |  |  |  |
| 58 | Service setup complete | 2011-05-20 → 2011-04-25 (-25d) | 2012-01-20 → 2011-12-26 (-25d) |  |  |  |  |  |
| 59 | **Create office assignment layout** | 2011-03-31 → 2011-02-14 (-45d) | 2011-04-12 → 2011-02-22 (-49d) | 8.12d → 6d |  | 203.12d → 201d |  |  |
| 60 | Assign office spaces | 2011-03-31 → 2011-02-14 (-45d) | 2011-04-07 → 2011-02-21 (-45d) |  |  | 203.12d → 201d | 29 → none |  |
| 61 | Assign new phone numbers, extensions | 2011-04-07 → 2011-02-14 (-52d) | 2011-04-11 → 2011-02-16 (-54d) |  |  | 203.12d → 203d | 60 → none |  |
| 62 | Create new office extension directory | 2011-04-11 → 2011-02-16 (-54d) | 2011-04-12 → 2011-02-17 (-54d) |  |  | 203.12d → 203d |  |  |
| 63 | Create new office layout map | 2011-04-07 → 2011-02-21 (-45d) | 2011-04-08 → 2011-02-22 (-45d) |  |  | 205.25d → 201d |  |  |
| 64 | Create new fax cover sheet | 2011-04-12 → 2011-02-17 (-54d) | 2011-04-12 → 2011-02-18 (-53d) | 0.12d → 1d |  | 203.12d → 203d |  |  |
| 65 | Office plan complete | 2011-04-12 → 2011-02-22 (-49d) | 2011-04-12 → 2011-02-22 (-49d) |  |  | 203.12d → 201d | 63, 62, 64 → 62, 63 |  |
| 66 | **Order new stationery** | 2011-04-12 → 2011-02-22 (-49d) | 2011-04-14 → 2011-02-23 (-50d) | 1.5d → 1d |  | 205.62d → 209d |  |  |
| 67 | Order new letterhead and envelopes | 2011-04-12 → 2011-02-22 (-49d) | 2011-04-13 → 2011-02-23 (-49d) | 0.25d → 1d |  | 205.62d → 209d |  |  |
| 68 | Order new business cards | 2011-04-13 → 2011-02-22 (-50d) | 2011-04-13 → 2011-02-23 (-49d) | 0.25d → 1d |  | 205.62d → 209d | 67 → none |  |
| 69 | Order new business forms | 2011-04-13 → 2011-02-22 (-50d) | 2011-04-13 → 2011-02-23 (-49d) | 0.25d → 1d |  | 205.62d → 209d | 68 → none |  |
| 70 | Get shipping labels | 2011-04-13 → 2011-02-22 (-50d) | 2011-04-13 → 2011-02-23 (-49d) | 0.25d → 1d |  | 205.62d → 218d | 69 → none | resources Office manager → none |
| 71 | Create map to location | 2011-04-13 → 2011-02-22 (-50d) | 2011-04-14 → 2011-02-23 (-50d) | 0.25d → 1d |  | 205.62d → 218d | 70 → none |  |
| 72 | Notify post office of change of address | 2011-04-14 → 2011-02-22 (-51d) | 2011-04-14 → 2011-02-23 (-50d) | 0.25d → 1d |  | 205.62d → 209d | 71 → none |  |
| 73 | Update company website with new information | 2011-04-12 → 2011-02-22 (-49d) | 2011-04-13 → 2011-02-23 (-49d) |  |  | 206.12d → 209d |  |  |
| 74 | **Hire movers** | 2011-04-11 → 2011-02-14 (-56d) | 2011-04-27 → 2011-03-03 (-55d) |  |  | 192d → 194d | 20FS+1mo → none |  |

| ID | Task | Start | Finish | Duration | Total float | Predecessors | Other |
| --- | --- | --- | --- | --- | --- | --- | --- |
| 75 | Obtain estimates from moving companies | 2011-04-11 → 2011-02-14 (-56d) | 2011-04-26 → 2011-03-02 (-55d) |  | 192d → 194d |  |  |
| 76 | Choose moving company | 2011-04-27 → 2011-03-02 (-56d) | 2011-04-27 → 2011-03-03 (-55d) |  | 192d → 194d |  |  |
| 77 | **Obtain insurance** | 2011-03-14 → 2011-02-14 (-28d) | 2011-03-30 → 2011-02-28 (-30d) | 13d → 10d | 212d → 197d |  |  |
| 78 | Appraise assets | 2011-03-14 → 2011-02-14 (-28d) | 2011-03-16 → 2011-02-17 (-27d) |  | 212d → 197d |  |  |
| 79 | Obtain quotes for insurance | 2011-03-17 → 2011-02-17 (-28d) | 2011-03-29 → 2011-02-25 (-32d) | 1d → 6d | 212d → 197d |  |  |
| 80 | Purchase insurance | 2011-03-30 → 2011-02-25 (-33d) | 2011-03-30 → 2011-02-28 (-30d) |  | 212d → 197d |  |  |
| 81 | Construction and prep complete | 2012-01-20 → 2011-03-03 (-323d) | 2012-01-20 → 2011-03-03 (-323d) |  | 0d → 194d | 58, 76, 80, 59 → 59, 76, 80 |  |
| 82 | **Move** | 2012-01-23 → 2011-03-03 (-326d) | 2012-01-26 → 2011-03-16 (-316d) | 4d → 9d | 0d → 194d |  |  |
| 83 | Inventory office | 2011-01-31 → 2011-03-03 (+31d) | 2011-03-18 → 2011-03-10 (-8d) | 25d → 5d | 220d → 194d | 13 → none | resources Office manager [50%] → Office manager |
| 84 | Distribute new keys, cards | 2012-01-23 → 2011-03-03 (-326d) | 2012-01-23 → 2011-03-04 (-325d) |  | 3d → 202d |  |  |
| 86 | Pack and move | 2012-01-23 → 2011-03-10 (-319d) | 2012-01-26 → 2011-03-16 (-316d) |  | 0d → 194d | 83 → 83, 85 |  |
| 87 | Move complete | 2012-01-26 → 2011-03-16 (-316d) | 2012-01-26 → 2011-03-16 (-316d) |  | 0d → 194d | 61, 84, 67, 68, 69, 40, 42, 72, 73, 57, 86, 83 → 61, 67, 68, 69, 72, 73, 83, 84, 86 |  |
| 88 | **Pre-move tasks** | 2012-01-23 → 2011-03-03 (-326d) | 2012-01-26 → 2011-03-09 (-323d) |  | 10d → 208d |  |  |
| 89 | Install phone system | 2012-01-23 → 2011-03-03 (-326d) | 2012-01-26 → 2011-03-09 (-323d) |  | 10d → 208d | 26 → none |  |
| 90 | **Post-Move** | 2012-01-27 → 2011-03-16 (-317d) | 2012-02-09 → 2011-03-29 (-317d) | 10d → 9d | 0d → 194d |  |  |
| 91 | Check for damage and missing items | 2012-01-27 → 2011-03-16 (-317d) | 2012-02-09 → 2011-03-29 (-317d) | 10d → 9d | 0d → 194d |  | resources Office manager [50%]; Relo Assistant [50%] → Office manager |
| 92 | Schedule phone training | 2012-01-27 → 2011-03-16 (-317d) | 2012-01-27 → 2011-03-17 (-316d) |  | 9d → 202d |  |  |
| 93 | Schedule security training | 2012-01-27 → 2011-03-16 (-317d) | 2012-01-27 → 2011-03-17 (-316d) |  | 9d → 202d |  | resources Office manager [50%] → Office manager |
| 94 | Schedule fire drill | 2012-01-27 → 2011-03-16 (-317d) | 2012-01-27 → 2011-03-17 (-316d) |  | 9d → 202d |  | resources Office manager [50%] → Office manager |
| 95 | Schedule open house for clients | 2012-01-27 → 2011-03-16 (-317d) | 2012-01-27 → 2011-03-17 (-316d) |  | 9d → 202d |  |  |
| 96 | Office move complete | 2012-02-09 → 2011-03-29 (-317d) | 2012-02-09 → 2011-03-29 (-317d) |  | 0d → 194d |  |  |
