# Office Move

How a schedule from MS Project changed from version to version. A marks actual dates.

## Version 1 (saved 2010-07-22, file OfficeMove_OnTrack.mpp)

Note of the change: commit con wordpress

| ID | WBS | Task | Duration | Start | Finish | Predecessors | Total float | Constraint |
| --- | --- | --- | --- | --- | --- | --- | --- | --- |
| 1 | 1 | **Planning Move** | 100d | 2010-11-01 | 2011-03-18 |  | 0d |  |
| 2 | 1.1 | **Document requirements** | 35d | 2010-11-01 | 2010-12-17 |  | 0d |  |
| 3 |  | Identify physical requirements | 20d | 2010-11-01 | 2010-11-26 |  | 0d |  |
| 4 |  | Draft the budget | 10d | 2010-11-22 | 2010-12-03 | 3FS-2.5% | 0d |  |
| 5 | 1.1.3 | **Mgt meeting** | 6d | 2010-12-10 | 2010-12-17 |  |  |  |
| 6 |  | Prepare mgt presentation | 3d | 2010-12-10 | 2010-12-14 | 4 | 0.5d |  |
| 7 |  | Prepare materials | 2d | 2010-12-15 | 2010-12-16 | 6 | 0.5d |  |
| 8 |  | Present to mgt | 4h | 2010-12-17 | 2010-12-17 | 7 |  |  |
| 9 | 1.2 | **Choose new location** | 65d | 2010-12-06 | 2011-03-04 |  | 0d |  |
| 10 | 1.2.1 | **Evaluate build sites** | 138d | 2010-11-01 | 2011-05-11 |  | -43d |  |
| 11 |  | Identify potential build sites | 25d | 2010-11-01 | 2010-12-03 |  | -43d |  |
| 12 |  | Identify construction needs | 30d | 2010-12-06 | 2011-02-02 | 11 | -56d |  |
| 13 |  | Select site | 10d | 2011-02-03 | 2011-02-16 | 12 | -56d |  |
| 14 |  | Finalize purchase | 60d | 2011-02-17 | 2011-05-11 | 13 | -56d |  |
| 15 | 1.2.2 | **Evaluate lease sites** | 65d | 2010-12-06 | 2011-03-04 |  | 0d |  |
| 16 |  | Identify potential sites | 25d | 2010-12-06 | 2011-01-19 | 4 | 0d |  |
| 17 |  | Identify tenant improvements | 7d | 2011-01-20 | 2011-01-28 | 16 | 5d |  |
| 18 |  | Select site | 10d | 2011-01-31 | 2011-02-11 | 17, 4 | 5d |  |
| 19 |  | Finalize lease | 10d | 2011-02-14 | 2011-03-04 | 18 | 5d |  |
| 20 | 1.3 | **Identify costs** | 42d | 2011-01-20 | 2011-03-18 |  | 0d |  |
| 21 |  | Estimate costs for tenant improvements | 10d | 2011-01-31 | 2011-02-11 | 17 | 218d |  |
| 22 |  | Identify addl costs (furniture, equipment) | 20d | 2011-01-20 | 2011-03-11 | 16 | 0d |  |
| 23 |  | Inventory office | 25d | 2011-01-31 | 2011-03-18 | 17 | 220d |  |
| 24 |  | Planning complete | 0d | 2011-03-11 | 2011-03-11 | 16, 18, 19, 17, 22, 14 | 0d |  |
| 25 |  | Hire contractors for tenant improvements | 5d | 2011-02-14 | 2011-02-18 | 21 | 218d |  |
| 26 | 2 | **Prep phone system** | 225d | 2011-03-14 | 2012-01-20 | 24 | 14d |  |
| 27 |  | Review phone system requirements | 3d | 2011-03-14 | 2011-03-16 |  | 230d |  |
| 28 |  | Order new phone numbers | 1d | 2011-03-17 | 2011-03-17 | 27 | 230d |  |
| 29 |  | Order long-distance service | 1d | 2011-03-18 | 2011-03-18 | 28 | 230d |  |
| 30 |  | Phone lines ordered | 0d | 2011-03-18 | 2011-03-18 | 29 | 230d |  |
| 31 | 2.5 | **Design and construction** | 81.75d | 2011-03-14 | 2011-07-05 |  | 148.25d |  |
| 32 | 2.5.1 | **Design space** | 54.75d | 2011-03-14 | 2011-05-27 |  | 148.25d |  |
| 33 |  | Design office space | 13.75d | 2011-03-14 | 2011-03-31 | 24 | 148.25d |  |
| 34 |  | Prepare drawings | 5d | 2011-03-31 | 2011-04-07 | 33 | 148.25d |  |
| 35 |  | Design IT infrastructure | 10d | 2011-04-07 | 2011-04-21 | 34 | 148.25d |  |
| 36 |  | Obtain final budget estimates | 10d | 2011-04-21 | 2011-05-05 | 35 | 148.25d |  |
| 37 |  | Sign off on plans | 1d | 2011-05-05 | 2011-05-06 | 36 | 148.25d |  |
| 38 |  | Obtain permits | 3w | 2011-05-06 | 2011-05-27 | 37 | 148.25d |  |
| 39 | 2.5.2 | **Construction** | 20d | 2011-05-27 | 2011-06-24 | 38 | 148.25d |  |
| 40 |  | Demolish walls | 5d | 2011-05-27 | 2011-06-03 | 25 | 148.25d |  |
| 41 |  | Construct new walls | 15d | 2011-06-03 | 2011-06-24 | 40 | 148.25d |  |
| 42 |  | Elec, mech, HVAC | 15d | 2011-06-03 | 2011-06-24 | 40 | 148.25d |  |
| 43 | 2.5.3 | **Walkthrough and repair** | 7d | 2011-06-24 | 2011-07-05 | 42, 41 | 148.25d |  |
| 44 |  | Repair issues | 5d | 2011-06-24 | 2011-07-01 |  | 148.25d |  |
| 45 |  | Schedule open house for employees | 1d | 2011-06-24 | 2011-06-27 |  | 163.25d |  |
| 46 |  | Clean new office | 1d | 2011-07-01 | 2011-07-04 | 44 | 148.25d |  |
| 47 |  | Construction complete | 0d | 2011-07-04 | 2011-07-04 | 46 | 157.25d |  |
| 48 |  | Open house | 1d | 2011-07-04 | 2011-07-05 | 47 | 157.25d |  |
| 49 | 2.6 | **Set up services** | 10d | 2011-05-09 | 2011-05-20 | 24FS+2mo | 0d |  |
| 50 |  | Order change of address labels | 1d | 2011-05-09 | 2011-05-09 |  | 9d |  |
| 51 |  | Obtain estimates from signage companies | 7d | 2011-05-09 | 2011-05-17 |  | 0d |  |
| 52 |  | Order signage | 3d | 2011-05-18 | 2011-05-20 | 51 | 0d |  |
| 53 |  | Arrange external maintenance | 5d | 2011-05-09 | 2011-05-13 |  | 5d |  |
| 54 |  | Arrange for trash disposal | 1d | 2011-05-09 | 2011-05-09 |  | 9d |  |
| 55 |  | Arrange for cleaning service | 1d | 2011-05-09 | 2011-05-09 |  | 9d |  |
| 56 |  | Arrange for recycling | 1d | 2011-05-09 | 2011-05-09 |  | 9d |  |
| 57 |  | Order security system | 2d | 2011-05-09 | 2011-05-10 |  | 8d |  |
| 58 |  | Send change of address to vendors, customers, supscriptions | 1d | 2011-05-09 | 2011-05-09 |  | 9d |  |
| 59 |  | Notify all leasers of equipment move | 1d | 2011-05-09 | 2011-05-09 |  | 9d |  |
| 60 |  | Order checks with new address | 1d | 2011-05-09 | 2011-05-09 |  | 9d |  |
| 61 |  | Schedule disconnection of utilities | 1d | 2011-05-09 | 2011-05-09 |  | 9d |  |
| 62 |  | Service setup complete | 0d | 2011-05-20 | 2012-01-20 | 49 | 0d | start no earlier than 2010-09-20 |
| 63 | 2.8 | **Create office assignment layout** | 8.12d | 2011-03-31 | 2011-04-12 |  | 203.12d |  |
| 64 |  | Assign office spaces | 5d | 2011-03-31 | 2011-04-07 | 33 | 203.12d |  |
| 65 |  | Assign new phone numbers, extensions | 2d | 2011-04-07 | 2011-04-11 | 64 | 203.12d |  |
| 66 |  | Create new office extension directory | 1d | 2011-04-11 | 2011-04-12 | 65 | 203.12d |  |
| 67 |  | Create new office layout map | 1d | 2011-04-07 | 2011-04-08 | 64 | 205.25d |  |
| 68 |  | Create new fax cover sheet | 0.12d | 2011-04-12 | 2011-04-12 | 66 | 203.12d |  |
| 69 |  | Office plan complete | 0d | 2011-04-12 | 2011-04-12 | 67, 66, 68 | 203.12d |  |
| 70 | 2.9 | **Order new stationery** | 1.5d | 2011-04-12 | 2011-04-14 | 69 | 205.62d |  |

| ID | WBS | Task | Duration | Start | Finish | Predecessors | Total float |
| --- | --- | --- | --- | --- | --- | --- | --- |
| 71 |  | Order new letterhead and envelopes | 0.25d | 2011-04-12 | 2011-04-13 |  | 205.62d |
| 72 |  | Order new business cards | 0.25d | 2011-04-13 | 2011-04-13 | 71 | 205.62d |
| 73 |  | Order new business forms | 0.25d | 2011-04-13 | 2011-04-13 | 72 | 205.62d |
| 74 |  | Get shipping labels | 0.25d | 2011-04-13 | 2011-04-13 | 73 | 205.62d |
| 75 |  | Create map to location | 0.25d | 2011-04-13 | 2011-04-14 | 74 | 205.62d |
| 76 |  | Notify post office of change of address | 0.25d | 2011-04-14 | 2011-04-14 | 75 | 205.62d |
| 77 |  | Update company website with new information | 1d | 2011-04-12 | 2011-04-13 |  | 206.12d |
| 78 | 2.10 | **Hire movers** | 13d | 2011-04-11 | 2011-04-27 | 24FS+1mo | 192d |
| 79 |  | Obtain estimates from moving companies | 12d | 2011-04-11 | 2011-04-26 |  | 192d |
| 80 |  | Choose moving company | 1d | 2011-04-27 | 2011-04-27 | 79 | 192d |
| 81 | 2.11 | **Obtain insurance** | 13d | 2011-03-14 | 2011-03-30 |  | 212d |
| 82 |  | Appraise assets | 3d | 2011-03-14 | 2011-03-16 |  | 212d |
| 83 |  | Obtain quotes for insurance | 1d | 2011-03-17 | 2011-03-29 | 82 | 212d |
| 84 |  | Purchase insurance | 1d | 2011-03-30 | 2011-03-30 | 83 | 212d |
| 85 |  | Construction and prep complete | 0d | 2012-01-20 | 2012-01-20 | 62, 80, 84, 63 | 0d |
| 86 | 4 | **Move** | 4d | 2012-01-23 | 2012-01-26 | 85 | 0d |
| 87 |  | Distribute new keys, cards | 1d | 2012-01-23 | 2012-01-23 |  | 3d |
| 88 |  | Pack and move | 4d | 2012-01-23 | 2012-01-26 | 23 | 0d |
| 89 |  | Move complete | 0d | 2012-01-26 | 2012-01-26 | 65, 87, 71, 72, 73, 44, 46, 76, 77, 61, 88, 23 | 0d |
| 90 | 5 | **Pre-move tasks** | 4d | 2012-01-23 | 2012-01-26 | 86SS | 10d |
| 91 |  | Install phone system | 4d | 2012-01-23 | 2012-01-26 | 30 | 10d |
| 92 | 6 | **Post-Move** | 10d | 2012-01-27 | 2012-02-09 | 89 | 0d |
| 93 |  | Check for damage and missing items | 10d | 2012-01-27 | 2012-02-09 |  | 0d |
| 94 |  | Schedule phone training | 1d | 2012-01-27 | 2012-01-27 |  | 9d |
| 95 |  | Schedule security training | 1d | 2012-01-27 | 2012-01-27 |  | 9d |
| 96 |  | Schedule fire drill | 1d | 2012-01-27 | 2012-01-27 |  | 9d |
| 97 |  | Schedule open house for clients | 1d | 2012-01-27 | 2012-01-27 |  | 9d |
| 98 |  | Office move complete | 0d | 2012-02-09 | 2012-02-09 | 89, 93, 94, 95, 96, 97 | 0d |

## Version 2 (saved 2010-07-29, file OfficeMove_BaselineActual.mpp)

Note of the change: commit con wordpress

Last finish 2012-02-09 → 2012-01-26 (-14d). Complete tasks 0 → 10.

Changed:

| ID | Task | Start | Finish | Duration | Complete | Total float | Other |
| --- | --- | --- | --- | --- | --- | --- | --- |
| 1 | **Planning Move** | 2010-11-01 A | 2011-03-18 → 2011-03-07 (-11d) | 100d → 91d | 0% → 70% | 0d → 219d | baseline start none → 2010-11-01; baseline finish none → 2011-03-18 |
| 2 | **Document requirements** | 2010-11-01 A | 2010-12-17 A |  | 0% → 100% | 0d → none | baseline start none → 2010-11-01; baseline finish none → 2010-12-17 |
| 3 | Identify requirements | 2010-11-01 A | 2010-11-26 → 2010-11-23 A (-3d) | 20d → 17d | 0% → 100% | 0d → none | was named Identify physical requirements; baseline start none → 2010-11-01; baseline finish none → 2010-11-26 |
| 4 | Draft the budget | 2010-11-22 → 2010-11-12 A (-10d) | 2010-12-03 → 2010-11-24 A (-9d) | 10d → 9d | 0% → 100% | 0d → none | baseline start none → 2010-11-22; baseline finish none → 2010-12-03 |
| 5 | **Mgt meeting** | 2010-12-10 A | 2010-12-17 A |  | 0% → 100% |  | baseline start none → 2010-12-10; baseline finish none → 2010-12-17 |
| 6 | Prepare mgt presentation | 2010-12-10 A | 2010-12-14 A |  | 0% → 100% | 0.5d → none | baseline start none → 2010-12-10; baseline finish none → 2010-12-14 |
| 7 | Prepare materials | 2010-12-15 A | 2010-12-16 → 2010-12-15 A (-1d) | 2d → 1d | 0% → 100% | 0.5d → none | baseline start none → 2010-12-15; baseline finish none → 2010-12-16 |
| 8 | Present to mgt | 2010-12-17 A | 2010-12-17 A |  | 0% → 100% |  | baseline start none → 2010-12-17; baseline finish none → 2010-12-17 |
| 9 | **Choose new location** | 2010-12-06 → 2010-11-29 A (-7d) | 2011-03-04 → 2011-02-14 (-18d) | 65d → 56d | 0% → 88% | 0d → 9d | baseline start none → 2010-12-06; baseline finish none → 2011-03-04 |
| 15 | **Evaluate lease sites** | 2010-12-06 → 2010-11-29 A (-7d) | 2011-03-04 → 2011-02-14 (-18d) | 65d → 56d | 0% → 88% | 0d → 9d | baseline start none → 2010-12-06; baseline finish none → 2011-03-04 |
| 16 | Identify potential sites | 2010-12-06 → 2010-11-29 A (-7d) | 2011-01-19 → 2011-01-05 A (-14d) | 25d → 20d | 0% → 100% | 0d → none | baseline start none → 2010-12-06; baseline finish none → 2011-01-19 |
| 17 | Identify tenant improvements | 2011-01-20 → 2011-01-06 A (-14d) | 2011-01-28 → 2011-01-17 A (-11d) | 7d → 8d | 0% → 100% | 5d → none | baseline start none → 2011-01-20; baseline finish none → 2011-01-28 |
| 18 | Select site | 2011-01-31 → 2011-01-18 A (-13d) | 2011-02-11 → 2011-01-24 A (-18d) | 10d → 5d | 0% → 100% | 5d → none | baseline start none → 2011-01-31; baseline finish none → 2011-02-11 |
| 19 | Finalize lease | 2011-02-14 → 2011-01-25 A (-20d) | 2011-03-04 → 2011-02-14 (-18d) |  | 0% → 50% | 5d → 9d | baseline start none → 2011-02-14; baseline finish none → 2011-03-04 |
| 20 | **Identify costs** | 2011-01-20 → 2011-01-06 A (-14d) | 2011-03-18 → 2011-03-07 (-11d) | 42d → 43d | 0% → 36% | 0d → 219d | baseline start none → 2011-01-20; baseline finish none → 2011-03-18 |
| 21 | Estimate costs for tenant improvements | 2011-01-31 → 2011-01-18 A (-13d) | 2011-02-11 → 2011-01-27 A (-15d) | 10d → 8d | 0% → 100% | 218d → none | baseline start none → 2011-01-31; baseline finish none → 2011-02-11 |
| 22 | Identify costs | 2011-01-20 → 2011-01-06 A (-14d) | 2011-03-11 → 2011-02-25 (-14d) |  | 0% → 25% |  | was named Identify addl costs (furniture, equipment); baseline start none → 2011-01-20; baseline finish none → 2011-03-11 |
| 23 | Inventory office | 2011-01-31 → 2011-01-18 A (-13d) | 2011-03-18 → 2011-03-07 (-11d) |  | 0% → 25% | 220d → 219d | baseline start none → 2011-01-31; baseline finish none → 2011-03-18 |
| 24 | Planning complete | 2011-03-11 → 2011-02-25 (-14d) | 2011-03-11 → 2011-02-25 (-14d) |  |  |  | baseline start none → 2011-03-11; baseline finish none → 2011-03-11 |
| 25 | Hire contractors for tenant improvements | 2011-02-14 → 2011-01-28 A (-17d) | 2011-02-18 → 2011-02-03 A (-15d) | 5d → 2.5d | 0% → 100% | 218d → none | baseline start none → 2011-02-14; baseline finish none → 2011-02-18 |
| 26 | **Prep phone system** | 2011-03-14 → 2011-02-28 (-14d) | 2012-01-20 → 2012-01-06 (-14d) |  |  |  | baseline start none → 2011-03-14; baseline finish none → 2012-01-20 |
| 27 | Review phone system requirements | 2011-03-14 → 2011-02-28 (-14d) | 2011-03-16 → 2011-03-02 (-14d) |  |  |  | baseline start none → 2011-03-14; baseline finish none → 2011-03-16 |
| 28 | Order new phone numbers | 2011-03-17 → 2011-03-03 (-14d) | 2011-03-17 → 2011-03-03 (-14d) |  |  |  | baseline start none → 2011-03-17; baseline finish none → 2011-03-17 |
| 29 | Order long-distance service | 2011-03-18 → 2011-03-04 (-14d) | 2011-03-18 → 2011-03-04 (-14d) |  |  |  | baseline start none → 2011-03-18; baseline finish none → 2011-03-18 |
| 30 | Phone lines ordered | 2011-03-18 → 2011-03-04 (-14d) | 2011-03-18 → 2011-03-04 (-14d) |  |  |  | baseline start none → 2011-03-18; baseline finish none → 2011-03-18 |
| 31 | **Design and construction** | 2011-03-14 → 2011-02-28 (-14d) | 2011-07-05 → 2011-06-21 (-14d) |  |  |  | baseline start none → 2011-03-14; baseline finish none → 2011-07-05 |
| 32 | **Design space** | 2011-03-14 → 2011-02-28 (-14d) | 2011-05-27 → 2011-05-13 (-14d) |  |  |  | baseline start none → 2011-03-14; baseline finish none → 2011-05-27 |
| 33 | Design office space | 2011-03-14 → 2011-02-28 (-14d) | 2011-03-31 → 2011-03-17 (-14d) |  |  |  | baseline start none → 2011-03-14; baseline finish none → 2011-03-31 |
| 34 | Prepare drawings | 2011-03-31 → 2011-03-17 (-14d) | 2011-04-07 → 2011-03-24 (-14d) |  |  |  | baseline start none → 2011-03-31; baseline finish none → 2011-04-07 |
| 35 | Design IT infrastructure | 2011-04-07 → 2011-03-24 (-14d) | 2011-04-21 → 2011-04-07 (-14d) |  |  |  | baseline start none → 2011-04-07; baseline finish none → 2011-04-21 |
| 36 | Obtain final budget estimates | 2011-04-21 → 2011-04-07 (-14d) | 2011-05-05 → 2011-04-21 (-14d) |  |  |  | baseline start none → 2011-04-21; baseline finish none → 2011-05-05 |
| 37 | Sign off on plans | 2011-05-05 → 2011-04-21 (-14d) | 2011-05-06 → 2011-04-22 (-14d) |  |  |  | baseline start none → 2011-05-05; baseline finish none → 2011-05-06 |
| 38 | Obtain permits | 2011-05-06 → 2011-04-22 (-14d) | 2011-05-27 → 2011-05-13 (-14d) |  |  |  | baseline start none → 2011-05-06; baseline finish none → 2011-05-27 |
| 39 | **Construction** | 2011-05-27 → 2011-05-13 (-14d) | 2011-06-24 → 2011-06-10 (-14d) |  |  |  | baseline start none → 2011-05-27; baseline finish none → 2011-06-24 |
| 40 | Demolish walls | 2011-05-27 → 2011-05-13 (-14d) | 2011-06-03 → 2011-05-20 (-14d) |  |  |  | baseline start none → 2011-05-27; baseline finish none → 2011-06-03 |
| 41 | Construct new walls | 2011-06-03 → 2011-05-20 (-14d) | 2011-06-24 → 2011-06-10 (-14d) |  |  |  | baseline start none → 2011-06-03; baseline finish none → 2011-06-24 |
| 42 | Elec, mech, HVAC | 2011-06-03 → 2011-05-20 (-14d) | 2011-06-24 → 2011-06-10 (-14d) |  |  |  | baseline start none → 2011-06-03; baseline finish none → 2011-06-24 |
| 43 | **Walkthrough and repair** | 2011-06-24 → 2011-06-10 (-14d) | 2011-07-05 → 2011-06-21 (-14d) |  |  |  | baseline start none → 2011-06-24; baseline finish none → 2011-07-05 |
| 44 | Repair issues | 2011-06-24 → 2011-06-10 (-14d) | 2011-07-01 → 2011-06-17 (-14d) |  |  |  | baseline start none → 2011-06-24; baseline finish none → 2011-07-01 |
| 45 | Schedule open house for employees | 2011-06-24 → 2011-06-10 (-14d) | 2011-06-27 → 2011-06-13 (-14d) |  |  |  | baseline start none → 2011-06-24; baseline finish none → 2011-06-27 |
| 46 | Clean new office | 2011-07-01 → 2011-06-17 (-14d) | 2011-07-04 → 2011-06-20 (-14d) |  |  |  | baseline start none → 2011-07-01; baseline finish none → 2011-07-04 |
| 47 | Construction complete | 2011-07-04 → 2011-06-20 (-14d) | 2011-07-04 → 2011-06-20 (-14d) |  |  |  | baseline start none → 2011-07-04; baseline finish none → 2011-07-04 |
| 48 | Open house | 2011-07-04 → 2011-06-20 (-14d) | 2011-07-05 → 2011-06-21 (-14d) |  |  |  | baseline start none → 2011-07-04; baseline finish none → 2011-07-05 |
| 49 | **Set up services** | 2011-05-09 → 2011-04-25 (-14d) | 2011-05-20 → 2011-05-06 (-14d) |  |  |  | baseline start none → 2011-05-09; baseline finish none → 2011-05-20 |
| 50 | Order change of address labels | 2011-05-09 → 2011-04-25 (-14d) | 2011-05-09 → 2011-04-25 (-14d) |  |  |  | baseline start none → 2011-05-09; baseline finish none → 2011-05-09 |
| 51 | Obtain estimates from signage companies | 2011-05-09 → 2011-04-25 (-14d) | 2011-05-17 → 2011-05-03 (-14d) |  |  |  | baseline start none → 2011-05-09; baseline finish none → 2011-05-17 |
| 52 | Order signage | 2011-05-18 → 2011-05-04 (-14d) | 2011-05-20 → 2011-05-06 (-14d) |  |  |  | baseline start none → 2011-05-18; baseline finish none → 2011-05-20 |
| 53 | Arrange external maintenance | 2011-05-09 → 2011-04-25 (-14d) | 2011-05-13 → 2011-04-29 (-14d) |  |  |  | baseline start none → 2011-05-09; baseline finish none → 2011-05-13 |
| 54 | Arrange for trash disposal | 2011-05-09 → 2011-04-25 (-14d) | 2011-05-09 → 2011-04-25 (-14d) |  |  |  | baseline start none → 2011-05-09; baseline finish none → 2011-05-09 |
| 55 | Arrange for cleaning service | 2011-05-09 → 2011-04-25 (-14d) | 2011-05-09 → 2011-04-25 (-14d) |  |  |  | baseline start none → 2011-05-09; baseline finish none → 2011-05-09 |
| 56 | Arrange for recycling | 2011-05-09 → 2011-04-25 (-14d) | 2011-05-09 → 2011-04-25 (-14d) |  |  |  | baseline start none → 2011-05-09; baseline finish none → 2011-05-09 |
| 57 | Order security system | 2011-05-09 → 2011-04-25 (-14d) | 2011-05-10 → 2011-04-26 (-14d) |  |  |  | baseline start none → 2011-05-09; baseline finish none → 2011-05-10 |
| 58 | Send change of address to vendors, customers, supscriptions | 2011-05-09 → 2011-04-25 (-14d) | 2011-05-09 → 2011-04-25 (-14d) |  |  |  | baseline start none → 2011-05-09; baseline finish none → 2011-05-09 |
| 59 | Notify all leasers of equipment move | 2011-05-09 → 2011-04-25 (-14d) | 2011-05-09 → 2011-04-25 (-14d) |  |  |  | baseline start none → 2011-05-09; baseline finish none → 2011-05-09 |
| 60 | Order checks with new address | 2011-05-09 → 2011-04-25 (-14d) | 2011-05-09 → 2011-04-25 (-14d) |  |  |  | baseline start none → 2011-05-09; baseline finish none → 2011-05-09 |
| 61 | Schedule disconnection of utilities | 2011-05-09 → 2011-04-25 (-14d) | 2011-05-09 → 2011-04-25 (-14d) |  |  |  | baseline start none → 2011-05-09; baseline finish none → 2011-05-09 |
| 62 | Service setup complete | 2011-05-20 → 2011-05-06 (-14d) | 2012-01-20 → 2012-01-06 (-14d) |  |  |  | baseline start none → 2011-05-20; baseline finish none → 2012-01-20 |
| 63 | **Create office assignment layout** | 2011-03-31 → 2011-03-17 (-14d) | 2011-04-12 → 2011-03-29 (-14d) |  |  |  | baseline start none → 2011-03-31; baseline finish none → 2011-04-12 |
| 64 | Assign office spaces | 2011-03-31 → 2011-03-17 (-14d) | 2011-04-07 → 2011-03-24 (-14d) |  |  |  | baseline start none → 2011-03-31; baseline finish none → 2011-04-07 |
| 65 | Assign new phone numbers, extensions | 2011-04-07 → 2011-03-24 (-14d) | 2011-04-11 → 2011-03-28 (-14d) |  |  |  | baseline start none → 2011-04-07; baseline finish none → 2011-04-11 |
| 66 | Create new office extension directory | 2011-04-11 → 2011-03-28 (-14d) | 2011-04-12 → 2011-03-29 (-14d) |  |  |  | baseline start none → 2011-04-11; baseline finish none → 2011-04-12 |
| 67 | Create new office layout map | 2011-04-07 → 2011-03-24 (-14d) | 2011-04-08 → 2011-03-25 (-14d) |  |  |  | baseline start none → 2011-04-07; baseline finish none → 2011-04-08 |
| 68 | Create new fax cover sheet | 2011-04-12 → 2011-03-29 (-14d) | 2011-04-12 → 2011-03-29 (-14d) |  |  |  | baseline start none → 2011-04-12; baseline finish none → 2011-04-12 |
| 69 | Office plan complete | 2011-04-12 → 2011-03-29 (-14d) | 2011-04-12 → 2011-03-29 (-14d) |  |  |  | baseline start none → 2011-04-12; baseline finish none → 2011-04-12 |
| 70 | **Order new stationery** | 2011-04-12 → 2011-03-29 (-14d) | 2011-04-14 → 2011-03-31 (-14d) |  |  |  | baseline start none → 2011-04-12; baseline finish none → 2011-04-14 |
| 71 | Order new letterhead and envelopes | 2011-04-12 → 2011-03-29 (-14d) | 2011-04-13 → 2011-03-30 (-14d) |  |  |  | baseline start none → 2011-04-12; baseline finish none → 2011-04-13 |
| 72 | Order new business cards | 2011-04-13 → 2011-03-30 (-14d) | 2011-04-13 → 2011-03-30 (-14d) |  |  |  | baseline start none → 2011-04-13; baseline finish none → 2011-04-13 |
| 73 | Order new business forms | 2011-04-13 → 2011-03-30 (-14d) | 2011-04-13 → 2011-03-30 (-14d) |  |  |  | baseline start none → 2011-04-13; baseline finish none → 2011-04-13 |
| 74 | Get shipping labels | 2011-04-13 → 2011-03-30 (-14d) | 2011-04-13 → 2011-03-30 (-14d) |  |  |  | baseline start none → 2011-04-13; baseline finish none → 2011-04-13 |
| 75 | Create map to location | 2011-04-13 → 2011-03-30 (-14d) | 2011-04-14 → 2011-03-31 (-14d) |  |  |  | baseline start none → 2011-04-13; baseline finish none → 2011-04-14 |

| ID | Task | Start | Finish | Other |
| --- | --- | --- | --- | --- |
| 76 | Notify post office of change of address | 2011-04-14 → 2011-03-31 (-14d) | 2011-04-14 → 2011-03-31 (-14d) | baseline start none → 2011-04-14; baseline finish none → 2011-04-14 |
| 77 | Update company website with new information | 2011-04-12 → 2011-03-29 (-14d) | 2011-04-13 → 2011-03-30 (-14d) | baseline start none → 2011-04-12; baseline finish none → 2011-04-13 |
| 78 | **Hire movers** | 2011-04-11 → 2011-03-28 (-14d) | 2011-04-27 → 2011-04-13 (-14d) | baseline start none → 2011-04-11; baseline finish none → 2011-04-27 |
| 79 | Obtain estimates from moving companies | 2011-04-11 → 2011-03-28 (-14d) | 2011-04-26 → 2011-04-12 (-14d) | baseline start none → 2011-04-11; baseline finish none → 2011-04-26 |
| 80 | Choose moving company | 2011-04-27 → 2011-04-13 (-14d) | 2011-04-27 → 2011-04-13 (-14d) | baseline start none → 2011-04-27; baseline finish none → 2011-04-27 |
| 81 | **Obtain insurance** | 2011-03-14 → 2011-02-28 (-14d) | 2011-03-30 → 2011-03-16 (-14d) | baseline start none → 2011-03-14; baseline finish none → 2011-03-30 |
| 82 | Appraise assets | 2011-03-14 → 2011-02-28 (-14d) | 2011-03-16 → 2011-03-02 (-14d) | baseline start none → 2011-03-14; baseline finish none → 2011-03-16 |
| 83 | Obtain quotes for insurance | 2011-03-17 → 2011-03-03 (-14d) | 2011-03-29 → 2011-03-15 (-14d) | baseline start none → 2011-03-17; baseline finish none → 2011-03-29 |
| 84 | Purchase insurance | 2011-03-30 → 2011-03-16 (-14d) | 2011-03-30 → 2011-03-16 (-14d) | baseline start none → 2011-03-30; baseline finish none → 2011-03-30 |
| 85 | Construction and prep complete | 2012-01-20 → 2012-01-06 (-14d) | 2012-01-20 → 2012-01-06 (-14d) | baseline start none → 2012-01-20; baseline finish none → 2012-01-20 |
| 86 | **Move** | 2012-01-23 → 2012-01-09 (-14d) | 2012-01-26 → 2012-01-12 (-14d) | baseline start none → 2012-01-23; baseline finish none → 2012-01-26 |
| 87 | Distribute new keys, cards | 2012-01-23 → 2012-01-09 (-14d) | 2012-01-23 → 2012-01-09 (-14d) | baseline start none → 2012-01-23; baseline finish none → 2012-01-23 |
| 88 | Pack and move | 2012-01-23 → 2012-01-09 (-14d) | 2012-01-26 → 2012-01-12 (-14d) | baseline start none → 2012-01-23; baseline finish none → 2012-01-26 |
| 89 | Move complete | 2012-01-26 → 2012-01-12 (-14d) | 2012-01-26 → 2012-01-12 (-14d) | baseline start none → 2012-01-26; baseline finish none → 2012-01-26 |
| 90 | **Pre-move tasks** | 2012-01-23 → 2012-01-09 (-14d) | 2012-01-26 → 2012-01-12 (-14d) | baseline start none → 2012-01-23; baseline finish none → 2012-01-26 |
| 91 | Install phone system | 2012-01-23 → 2012-01-09 (-14d) | 2012-01-26 → 2012-01-12 (-14d) | baseline start none → 2012-01-23; baseline finish none → 2012-01-26 |
| 92 | **Post-Move** | 2012-01-27 → 2012-01-13 (-14d) | 2012-02-09 → 2012-01-26 (-14d) | baseline start none → 2012-01-27; baseline finish none → 2012-02-09 |
| 93 | Check for damage and missing items | 2012-01-27 → 2012-01-13 (-14d) | 2012-02-09 → 2012-01-26 (-14d) | baseline start none → 2012-01-27; baseline finish none → 2012-02-09 |
| 94 | Schedule phone training | 2012-01-27 → 2012-01-13 (-14d) | 2012-01-27 → 2012-01-13 (-14d) | baseline start none → 2012-01-27; baseline finish none → 2012-01-27 |
| 95 | Schedule security training | 2012-01-27 → 2012-01-13 (-14d) | 2012-01-27 → 2012-01-13 (-14d) | baseline start none → 2012-01-27; baseline finish none → 2012-01-27 |
| 96 | Schedule fire drill | 2012-01-27 → 2012-01-13 (-14d) | 2012-01-27 → 2012-01-13 (-14d) | baseline start none → 2012-01-27; baseline finish none → 2012-01-27 |
| 97 | Schedule open house for clients | 2012-01-27 → 2012-01-13 (-14d) | 2012-01-27 → 2012-01-13 (-14d) | baseline start none → 2012-01-27; baseline finish none → 2012-01-27 |
| 98 | Office move complete | 2012-02-09 → 2012-01-26 (-14d) | 2012-02-09 → 2012-01-26 (-14d) | baseline start none → 2012-02-09; baseline finish none → 2012-02-09 |

## Version 3 (saved 2010-07-29, file OfficeMove_PreBaseline.mpp)

Note of the change: commit con wordpress

Last finish 2012-01-26 → 2012-02-09 (+14d). Complete tasks 10 → 0.

Changed:

| ID | Task | Start | Finish | Duration | Complete | Total float | Other |
| --- | --- | --- | --- | --- | --- | --- | --- |
| 1 | **Planning Move** | 2010-11-01 A → 2010-11-01 | 2011-03-07 → 2011-03-18 (+11d) | 91d → 100d | 70% → 0% | 219d → 0d | baseline start 2010-11-01 → none; baseline finish 2011-03-18 → none |
| 2 | **Document requirements** | 2010-11-01 A → 2010-11-01 | 2010-12-17 A → 2010-12-17 |  | 100% → 0% | none → 0d | baseline start 2010-11-01 → none; baseline finish 2010-12-17 → none |
| 3 | Identify physical requirements | 2010-11-01 A → 2010-11-01 | 2010-11-23 A → 2010-11-26 (+3d) | 17d → 20d | 100% → 0% | none → 0d | was named Identify requirements; baseline start 2010-11-01 → none; baseline finish 2010-11-26 → none |
| 4 | Draft the budget | 2010-11-12 A → 2010-11-22 (+10d) | 2010-11-24 A → 2010-12-03 (+9d) | 9d → 10d | 100% → 0% | none → 0d | baseline start 2010-11-22 → none; baseline finish 2010-12-03 → none |
| 5 | **Mgt meeting** | 2010-12-10 A → 2010-12-10 | 2010-12-17 A → 2010-12-17 |  | 100% → 0% |  | baseline start 2010-12-10 → none; baseline finish 2010-12-17 → none |
| 6 | Prepare mgt presentation | 2010-12-10 A → 2010-12-10 | 2010-12-14 A → 2010-12-14 |  | 100% → 0% | none → 0.5d | baseline start 2010-12-10 → none; baseline finish 2010-12-14 → none |
| 7 | Prepare materials | 2010-12-15 A → 2010-12-15 | 2010-12-15 A → 2010-12-16 (+1d) | 1d → 2d | 100% → 0% | none → 0.5d | baseline start 2010-12-15 → none; baseline finish 2010-12-16 → none |
| 8 | Present to mgt | 2010-12-17 A → 2010-12-17 | 2010-12-17 A → 2010-12-17 |  | 100% → 0% |  | baseline start 2010-12-17 → none; baseline finish 2010-12-17 → none |
| 9 | **Choose new location** | 2010-11-29 A → 2010-12-06 (+7d) | 2011-02-14 → 2011-03-04 (+18d) | 56d → 65d | 88% → 0% | 9d → 0d | baseline start 2010-12-06 → none; baseline finish 2011-03-04 → none |
| 15 | **Evaluate lease sites** | 2010-11-29 A → 2010-12-06 (+7d) | 2011-02-14 → 2011-03-04 (+18d) | 56d → 65d | 88% → 0% | 9d → 0d | baseline start 2010-12-06 → none; baseline finish 2011-03-04 → none |
| 16 | Identify potential sites | 2010-11-29 A → 2010-12-06 (+7d) | 2011-01-05 A → 2011-01-19 (+14d) | 20d → 25d | 100% → 0% | none → 0d | baseline start 2010-12-06 → none; baseline finish 2011-01-19 → none |
| 17 | Identify tenant improvements | 2011-01-06 A → 2011-01-20 (+14d) | 2011-01-17 A → 2011-01-28 (+11d) | 8d → 7d | 100% → 0% | none → 5d | baseline start 2011-01-20 → none; baseline finish 2011-01-28 → none |
| 18 | Select site | 2011-01-18 A → 2011-01-31 (+13d) | 2011-01-24 A → 2011-02-11 (+18d) | 5d → 10d | 100% → 0% | none → 5d | baseline start 2011-01-31 → none; baseline finish 2011-02-11 → none |
| 19 | Finalize lease | 2011-01-25 A → 2011-02-14 (+20d) | 2011-02-14 → 2011-03-04 (+18d) |  | 50% → 0% | 9d → 5d | baseline start 2011-02-14 → none; baseline finish 2011-03-04 → none |
| 20 | **Identify costs** | 2011-01-06 A → 2011-01-20 (+14d) | 2011-03-07 → 2011-03-18 (+11d) | 43d → 42d | 36% → 0% | 219d → 0d | baseline start 2011-01-20 → none; baseline finish 2011-03-18 → none |
| 21 | Estimate costs for tenant improvements | 2011-01-18 A → 2011-01-31 (+13d) | 2011-01-27 A → 2011-02-11 (+15d) | 8d → 10d | 100% → 0% | none → 218d | baseline start 2011-01-31 → none; baseline finish 2011-02-11 → none |
| 22 | Identify addl costs (furniture, equipment) | 2011-01-06 A → 2011-01-20 (+14d) | 2011-02-25 → 2011-03-11 (+14d) |  | 25% → 0% |  | was named Identify costs; baseline start 2011-01-20 → none; baseline finish 2011-03-11 → none |
| 23 | Inventory office | 2011-01-18 A → 2011-01-31 (+13d) | 2011-03-07 → 2011-03-18 (+11d) |  | 25% → 0% | 219d → 220d | baseline start 2011-01-31 → none; baseline finish 2011-03-18 → none |
| 24 | Planning complete | 2011-02-25 → 2011-03-11 (+14d) | 2011-02-25 → 2011-03-11 (+14d) |  |  |  | baseline start 2011-03-11 → none; baseline finish 2011-03-11 → none |
| 25 | Hire contractors for tenant improvements | 2011-01-28 A → 2011-02-14 (+17d) | 2011-02-03 A → 2011-02-18 (+15d) | 2.5d → 5d | 100% → 0% | none → 218d | baseline start 2011-02-14 → none; baseline finish 2011-02-18 → none |
| 26 | **Prep phone system** | 2011-02-28 → 2011-03-14 (+14d) | 2012-01-06 → 2012-01-20 (+14d) |  |  |  | baseline start 2011-03-14 → none; baseline finish 2012-01-20 → none |
| 27 | Review phone system requirements | 2011-02-28 → 2011-03-14 (+14d) | 2011-03-02 → 2011-03-16 (+14d) |  |  |  | baseline start 2011-03-14 → none; baseline finish 2011-03-16 → none |
| 28 | Order new phone numbers | 2011-03-03 → 2011-03-17 (+14d) | 2011-03-03 → 2011-03-17 (+14d) |  |  |  | baseline start 2011-03-17 → none; baseline finish 2011-03-17 → none |
| 29 | Order long-distance service | 2011-03-04 → 2011-03-18 (+14d) | 2011-03-04 → 2011-03-18 (+14d) |  |  |  | baseline start 2011-03-18 → none; baseline finish 2011-03-18 → none |
| 30 | Phone lines ordered | 2011-03-04 → 2011-03-18 (+14d) | 2011-03-04 → 2011-03-18 (+14d) |  |  |  | baseline start 2011-03-18 → none; baseline finish 2011-03-18 → none |
| 31 | **Design and construction** | 2011-02-28 → 2011-03-14 (+14d) | 2011-06-21 → 2011-07-05 (+14d) |  |  |  | baseline start 2011-03-14 → none; baseline finish 2011-07-05 → none |
| 32 | **Design space** | 2011-02-28 → 2011-03-14 (+14d) | 2011-05-13 → 2011-05-27 (+14d) |  |  |  | baseline start 2011-03-14 → none; baseline finish 2011-05-27 → none |
| 33 | Design office space | 2011-02-28 → 2011-03-14 (+14d) | 2011-03-17 → 2011-03-31 (+14d) |  |  |  | baseline start 2011-03-14 → none; baseline finish 2011-03-31 → none |
| 34 | Prepare drawings | 2011-03-17 → 2011-03-31 (+14d) | 2011-03-24 → 2011-04-07 (+14d) |  |  |  | baseline start 2011-03-31 → none; baseline finish 2011-04-07 → none |
| 35 | Design IT infrastructure | 2011-03-24 → 2011-04-07 (+14d) | 2011-04-07 → 2011-04-21 (+14d) |  |  |  | baseline start 2011-04-07 → none; baseline finish 2011-04-21 → none |
| 36 | Obtain final budget estimates | 2011-04-07 → 2011-04-21 (+14d) | 2011-04-21 → 2011-05-05 (+14d) |  |  |  | baseline start 2011-04-21 → none; baseline finish 2011-05-05 → none |
| 37 | Sign off on plans | 2011-04-21 → 2011-05-05 (+14d) | 2011-04-22 → 2011-05-06 (+14d) |  |  |  | baseline start 2011-05-05 → none; baseline finish 2011-05-06 → none |
| 38 | Obtain permits | 2011-04-22 → 2011-05-06 (+14d) | 2011-05-13 → 2011-05-27 (+14d) |  |  |  | baseline start 2011-05-06 → none; baseline finish 2011-05-27 → none |
| 39 | **Construction** | 2011-05-13 → 2011-05-27 (+14d) | 2011-06-10 → 2011-06-24 (+14d) |  |  |  | baseline start 2011-05-27 → none; baseline finish 2011-06-24 → none |
| 40 | Demolish walls | 2011-05-13 → 2011-05-27 (+14d) | 2011-05-20 → 2011-06-03 (+14d) |  |  |  | baseline start 2011-05-27 → none; baseline finish 2011-06-03 → none |
| 41 | Construct new walls | 2011-05-20 → 2011-06-03 (+14d) | 2011-06-10 → 2011-06-24 (+14d) |  |  |  | baseline start 2011-06-03 → none; baseline finish 2011-06-24 → none |
| 42 | Elec, mech, HVAC | 2011-05-20 → 2011-06-03 (+14d) | 2011-06-10 → 2011-06-24 (+14d) |  |  |  | baseline start 2011-06-03 → none; baseline finish 2011-06-24 → none |
| 43 | **Walkthrough and repair** | 2011-06-10 → 2011-06-24 (+14d) | 2011-06-21 → 2011-07-05 (+14d) |  |  |  | baseline start 2011-06-24 → none; baseline finish 2011-07-05 → none |
| 44 | Repair issues | 2011-06-10 → 2011-06-24 (+14d) | 2011-06-17 → 2011-07-01 (+14d) |  |  |  | baseline start 2011-06-24 → none; baseline finish 2011-07-01 → none |
| 45 | Schedule open house for employees | 2011-06-10 → 2011-06-24 (+14d) | 2011-06-13 → 2011-06-27 (+14d) |  |  |  | baseline start 2011-06-24 → none; baseline finish 2011-06-27 → none |
| 46 | Clean new office | 2011-06-17 → 2011-07-01 (+14d) | 2011-06-20 → 2011-07-04 (+14d) |  |  |  | baseline start 2011-07-01 → none; baseline finish 2011-07-04 → none |
| 47 | Construction complete | 2011-06-20 → 2011-07-04 (+14d) | 2011-06-20 → 2011-07-04 (+14d) |  |  |  | baseline start 2011-07-04 → none; baseline finish 2011-07-04 → none |
| 48 | Open house | 2011-06-20 → 2011-07-04 (+14d) | 2011-06-21 → 2011-07-05 (+14d) |  |  |  | baseline start 2011-07-04 → none; baseline finish 2011-07-05 → none |
| 49 | **Set up services** | 2011-04-25 → 2011-05-09 (+14d) | 2011-05-06 → 2011-05-20 (+14d) |  |  |  | baseline start 2011-05-09 → none; baseline finish 2011-05-20 → none |
| 50 | Order change of address labels | 2011-04-25 → 2011-05-09 (+14d) | 2011-04-25 → 2011-05-09 (+14d) |  |  |  | baseline start 2011-05-09 → none; baseline finish 2011-05-09 → none |
| 51 | Obtain estimates from signage companies | 2011-04-25 → 2011-05-09 (+14d) | 2011-05-03 → 2011-05-17 (+14d) |  |  |  | baseline start 2011-05-09 → none; baseline finish 2011-05-17 → none |
| 52 | Order signage | 2011-05-04 → 2011-05-18 (+14d) | 2011-05-06 → 2011-05-20 (+14d) |  |  |  | baseline start 2011-05-18 → none; baseline finish 2011-05-20 → none |
| 53 | Arrange external maintenance | 2011-04-25 → 2011-05-09 (+14d) | 2011-04-29 → 2011-05-13 (+14d) |  |  |  | baseline start 2011-05-09 → none; baseline finish 2011-05-13 → none |
| 54 | Arrange for trash disposal | 2011-04-25 → 2011-05-09 (+14d) | 2011-04-25 → 2011-05-09 (+14d) |  |  |  | baseline start 2011-05-09 → none; baseline finish 2011-05-09 → none |
| 55 | Arrange for cleaning service | 2011-04-25 → 2011-05-09 (+14d) | 2011-04-25 → 2011-05-09 (+14d) |  |  |  | baseline start 2011-05-09 → none; baseline finish 2011-05-09 → none |
| 56 | Arrange for recycling | 2011-04-25 → 2011-05-09 (+14d) | 2011-04-25 → 2011-05-09 (+14d) |  |  |  | baseline start 2011-05-09 → none; baseline finish 2011-05-09 → none |
| 57 | Order security system | 2011-04-25 → 2011-05-09 (+14d) | 2011-04-26 → 2011-05-10 (+14d) |  |  |  | baseline start 2011-05-09 → none; baseline finish 2011-05-10 → none |
| 58 | Send change of address to vendors, customers, supscriptions | 2011-04-25 → 2011-05-09 (+14d) | 2011-04-25 → 2011-05-09 (+14d) |  |  |  | baseline start 2011-05-09 → none; baseline finish 2011-05-09 → none |
| 59 | Notify all leasers of equipment move | 2011-04-25 → 2011-05-09 (+14d) | 2011-04-25 → 2011-05-09 (+14d) |  |  |  | baseline start 2011-05-09 → none; baseline finish 2011-05-09 → none |
| 60 | Order checks with new address | 2011-04-25 → 2011-05-09 (+14d) | 2011-04-25 → 2011-05-09 (+14d) |  |  |  | baseline start 2011-05-09 → none; baseline finish 2011-05-09 → none |
| 61 | Schedule disconnection of utilities | 2011-04-25 → 2011-05-09 (+14d) | 2011-04-25 → 2011-05-09 (+14d) |  |  |  | baseline start 2011-05-09 → none; baseline finish 2011-05-09 → none |
| 62 | Service setup complete | 2011-05-06 → 2011-05-20 (+14d) | 2012-01-06 → 2012-01-20 (+14d) |  |  |  | baseline start 2011-05-20 → none; baseline finish 2012-01-20 → none |
| 63 | **Create office assignment layout** | 2011-03-17 → 2011-03-31 (+14d) | 2011-03-29 → 2011-04-12 (+14d) |  |  |  | baseline start 2011-03-31 → none; baseline finish 2011-04-12 → none |
| 64 | Assign office spaces | 2011-03-17 → 2011-03-31 (+14d) | 2011-03-24 → 2011-04-07 (+14d) |  |  |  | baseline start 2011-03-31 → none; baseline finish 2011-04-07 → none |
| 65 | Assign new phone numbers, extensions | 2011-03-24 → 2011-04-07 (+14d) | 2011-03-28 → 2011-04-11 (+14d) |  |  |  | baseline start 2011-04-07 → none; baseline finish 2011-04-11 → none |
| 66 | Create new office extension directory | 2011-03-28 → 2011-04-11 (+14d) | 2011-03-29 → 2011-04-12 (+14d) |  |  |  | baseline start 2011-04-11 → none; baseline finish 2011-04-12 → none |
| 67 | Create new office layout map | 2011-03-24 → 2011-04-07 (+14d) | 2011-03-25 → 2011-04-08 (+14d) |  |  |  | baseline start 2011-04-07 → none; baseline finish 2011-04-08 → none |
| 68 | Create new fax cover sheet | 2011-03-29 → 2011-04-12 (+14d) | 2011-03-29 → 2011-04-12 (+14d) |  |  |  | baseline start 2011-04-12 → none; baseline finish 2011-04-12 → none |
| 69 | Office plan complete | 2011-03-29 → 2011-04-12 (+14d) | 2011-03-29 → 2011-04-12 (+14d) |  |  |  | baseline start 2011-04-12 → none; baseline finish 2011-04-12 → none |
| 70 | **Order new stationery** | 2011-03-29 → 2011-04-12 (+14d) | 2011-03-31 → 2011-04-14 (+14d) |  |  |  | baseline start 2011-04-12 → none; baseline finish 2011-04-14 → none |
| 71 | Order new letterhead and envelopes | 2011-03-29 → 2011-04-12 (+14d) | 2011-03-30 → 2011-04-13 (+14d) |  |  |  | baseline start 2011-04-12 → none; baseline finish 2011-04-13 → none |
| 72 | Order new business cards | 2011-03-30 → 2011-04-13 (+14d) | 2011-03-30 → 2011-04-13 (+14d) |  |  |  | baseline start 2011-04-13 → none; baseline finish 2011-04-13 → none |
| 73 | Order new business forms | 2011-03-30 → 2011-04-13 (+14d) | 2011-03-30 → 2011-04-13 (+14d) |  |  |  | baseline start 2011-04-13 → none; baseline finish 2011-04-13 → none |
| 74 | Get shipping labels | 2011-03-30 → 2011-04-13 (+14d) | 2011-03-30 → 2011-04-13 (+14d) |  |  |  | baseline start 2011-04-13 → none; baseline finish 2011-04-13 → none |
| 75 | Create map to location | 2011-03-30 → 2011-04-13 (+14d) | 2011-03-31 → 2011-04-14 (+14d) |  |  |  | baseline start 2011-04-13 → none; baseline finish 2011-04-14 → none |

| ID | Task | Start | Finish | Other |
| --- | --- | --- | --- | --- |
| 76 | Notify post office of change of address | 2011-03-31 → 2011-04-14 (+14d) | 2011-03-31 → 2011-04-14 (+14d) | baseline start 2011-04-14 → none; baseline finish 2011-04-14 → none |
| 77 | Update company website with new information | 2011-03-29 → 2011-04-12 (+14d) | 2011-03-30 → 2011-04-13 (+14d) | baseline start 2011-04-12 → none; baseline finish 2011-04-13 → none |
| 78 | **Hire movers** | 2011-03-28 → 2011-04-11 (+14d) | 2011-04-13 → 2011-04-27 (+14d) | baseline start 2011-04-11 → none; baseline finish 2011-04-27 → none |
| 79 | Obtain estimates from moving companies | 2011-03-28 → 2011-04-11 (+14d) | 2011-04-12 → 2011-04-26 (+14d) | baseline start 2011-04-11 → none; baseline finish 2011-04-26 → none |
| 80 | Choose moving company | 2011-04-13 → 2011-04-27 (+14d) | 2011-04-13 → 2011-04-27 (+14d) | baseline start 2011-04-27 → none; baseline finish 2011-04-27 → none |
| 81 | **Obtain insurance** | 2011-02-28 → 2011-03-14 (+14d) | 2011-03-16 → 2011-03-30 (+14d) | baseline start 2011-03-14 → none; baseline finish 2011-03-30 → none |
| 82 | Appraise assets | 2011-02-28 → 2011-03-14 (+14d) | 2011-03-02 → 2011-03-16 (+14d) | baseline start 2011-03-14 → none; baseline finish 2011-03-16 → none |
| 83 | Obtain quotes for insurance | 2011-03-03 → 2011-03-17 (+14d) | 2011-03-15 → 2011-03-29 (+14d) | baseline start 2011-03-17 → none; baseline finish 2011-03-29 → none |
| 84 | Purchase insurance | 2011-03-16 → 2011-03-30 (+14d) | 2011-03-16 → 2011-03-30 (+14d) | baseline start 2011-03-30 → none; baseline finish 2011-03-30 → none |
| 85 | Construction and prep complete | 2012-01-06 → 2012-01-20 (+14d) | 2012-01-06 → 2012-01-20 (+14d) | baseline start 2012-01-20 → none; baseline finish 2012-01-20 → none |
| 86 | **Move** | 2012-01-09 → 2012-01-23 (+14d) | 2012-01-12 → 2012-01-26 (+14d) | baseline start 2012-01-23 → none; baseline finish 2012-01-26 → none |
| 87 | Distribute new keys, cards | 2012-01-09 → 2012-01-23 (+14d) | 2012-01-09 → 2012-01-23 (+14d) | baseline start 2012-01-23 → none; baseline finish 2012-01-23 → none |
| 88 | Pack and move | 2012-01-09 → 2012-01-23 (+14d) | 2012-01-12 → 2012-01-26 (+14d) | baseline start 2012-01-23 → none; baseline finish 2012-01-26 → none |
| 89 | Move complete | 2012-01-12 → 2012-01-26 (+14d) | 2012-01-12 → 2012-01-26 (+14d) | baseline start 2012-01-26 → none; baseline finish 2012-01-26 → none |
| 90 | **Pre-move tasks** | 2012-01-09 → 2012-01-23 (+14d) | 2012-01-12 → 2012-01-26 (+14d) | baseline start 2012-01-23 → none; baseline finish 2012-01-26 → none |
| 91 | Install phone system | 2012-01-09 → 2012-01-23 (+14d) | 2012-01-12 → 2012-01-26 (+14d) | baseline start 2012-01-23 → none; baseline finish 2012-01-26 → none |
| 92 | **Post-Move** | 2012-01-13 → 2012-01-27 (+14d) | 2012-01-26 → 2012-02-09 (+14d) | baseline start 2012-01-27 → none; baseline finish 2012-02-09 → none |
| 93 | Check for damage and missing items | 2012-01-13 → 2012-01-27 (+14d) | 2012-01-26 → 2012-02-09 (+14d) | baseline start 2012-01-27 → none; baseline finish 2012-02-09 → none |
| 94 | Schedule phone training | 2012-01-13 → 2012-01-27 (+14d) | 2012-01-13 → 2012-01-27 (+14d) | baseline start 2012-01-27 → none; baseline finish 2012-01-27 → none |
| 95 | Schedule security training | 2012-01-13 → 2012-01-27 (+14d) | 2012-01-13 → 2012-01-27 (+14d) | baseline start 2012-01-27 → none; baseline finish 2012-01-27 → none |
| 96 | Schedule fire drill | 2012-01-13 → 2012-01-27 (+14d) | 2012-01-13 → 2012-01-27 (+14d) | baseline start 2012-01-27 → none; baseline finish 2012-01-27 → none |
| 97 | Schedule open house for clients | 2012-01-13 → 2012-01-27 (+14d) | 2012-01-13 → 2012-01-27 (+14d) | baseline start 2012-01-27 → none; baseline finish 2012-01-27 → none |
| 98 | Office move complete | 2012-01-26 → 2012-02-09 (+14d) | 2012-01-26 → 2012-02-09 (+14d) | baseline start 2012-02-09 → none; baseline finish 2012-02-09 → none |

## Version 4 (saved 2010-07-29, file OfficeMove_EditBaseline.mpp)

Note of the change: commit con wordpress

Last finish 2012-02-09 → 2012-01-26 (-14d). Complete tasks 0 → 10.

Removed: 10 Evaluate build sites; 11 Identify potential build sites; 12 Identify construction needs; 13 Select site; 14 Finalize purchase

Changed:

| ID | Task | Start | Finish | Duration | Complete | Total float | Predecessors | Other |
| --- | --- | --- | --- | --- | --- | --- | --- | --- |
| 1 | **Planning Move** | 2010-11-01 A | 2011-03-18 → 2011-03-07 (-11d) | 100d → 91d | 0% → 70% | 0d → 219d |  | baseline start none → 2010-11-01; baseline finish none → 2011-03-18 |
| 2 | **Document requirements** | 2010-11-01 A | 2010-12-17 A |  | 0% → 100% | 0d → none |  | baseline start none → 2010-11-01; baseline finish none → 2010-12-17 |
| 3 | Identify physical requirements | 2010-11-01 A | 2010-11-26 → 2010-11-23 A (-3d) | 20d → 17d | 0% → 100% | 0d → none |  | baseline start none → 2010-11-01; baseline finish none → 2010-11-26 |
| 4 | Draft the budget | 2010-11-22 → 2010-11-12 A (-10d) | 2010-12-03 → 2010-11-24 A (-9d) | 10d → 9d | 0% → 100% | 0d → none |  | baseline start none → 2010-11-22; baseline finish none → 2010-12-03 |
| 5 | **Mgt meeting** | 2010-12-10 A | 2010-12-17 A |  | 0% → 100% |  |  | baseline start none → 2010-12-10; baseline finish none → 2010-12-17 |
| 6 | Prepare mgt presentation | 2010-12-10 A | 2010-12-14 A |  | 0% → 100% | 0.5d → none |  | baseline start none → 2010-12-10; baseline finish none → 2010-12-14 |
| 7 | Prepare materials | 2010-12-15 A | 2010-12-16 → 2010-12-15 A (-1d) | 2d → 1d | 0% → 100% | 0.5d → none |  | baseline start none → 2010-12-15; baseline finish none → 2010-12-16 |
| 8 | Present to mgt | 2010-12-17 A | 2010-12-17 A |  | 0% → 100% |  |  | baseline start none → 2010-12-17; baseline finish none → 2010-12-17 |
| 9 | **Choose new location** | 2010-12-06 → 2010-11-29 A (-7d) | 2011-03-04 → 2011-02-14 (-18d) | 65d → 56d | 0% → 88% | 0d → 9d |  | baseline start none → 2010-12-06; baseline finish none → 2011-03-04 |
| 10 | **Evaluate lease sites** | 2010-12-06 → 2010-11-29 A (-7d) | 2011-03-04 → 2011-02-14 (-18d) | 65d → 56d | 0% → 88% | 0d → 9d |  | baseline start none → 2010-12-06; baseline finish none → 2011-03-04 |
| 11 | Identify potential sites | 2010-12-06 → 2010-11-29 A (-7d) | 2011-01-19 → 2011-01-05 A (-14d) | 25d → 20d | 0% → 100% | 0d → none |  | baseline start none → 2010-12-06; baseline finish none → 2011-01-19 |
| 12 | Identify tenant improvements | 2011-01-20 → 2011-01-06 A (-14d) | 2011-01-28 → 2011-01-17 A (-11d) | 7d → 8d | 0% → 100% | 5d → none |  | baseline start none → 2011-01-20; baseline finish none → 2011-01-28 |
| 13 | Select site | 2011-01-31 → 2011-01-18 A (-13d) | 2011-02-11 → 2011-01-24 A (-18d) | 10d → 5d | 0% → 100% | 5d → none |  | baseline start none → 2011-01-31; baseline finish none → 2011-02-11 |
| 14 | Finalize lease | 2011-02-14 → 2011-01-25 A (-20d) | 2011-03-04 → 2011-02-14 (-18d) |  | 0% → 50% | 5d → 9d |  | baseline start none → 2011-02-14; baseline finish none → 2011-03-04 |
| 15 | **Identify costs** | 2011-01-20 → 2011-01-06 A (-14d) | 2011-03-18 → 2011-03-07 (-11d) | 42d → 43d | 0% → 36% | 0d → 219d |  | baseline start none → 2011-01-20; baseline finish none → 2011-03-18 |
| 16 | Estimate costs for tenant improvements | 2011-01-31 → 2011-01-18 A (-13d) | 2011-02-11 → 2011-01-27 A (-15d) | 10d → 8d | 0% → 100% | 218d → none |  | baseline start none → 2011-01-31; baseline finish none → 2011-02-11 |
| 17 | Identify addl costs (furniture, equipment) | 2011-01-20 → 2011-01-06 A (-14d) | 2011-03-11 → 2011-02-25 (-14d) |  | 0% → 25% |  |  | baseline start none → 2011-01-20; baseline finish none → 2011-03-11 |
| 18 | Inventory office | 2011-01-31 → 2011-01-18 A (-13d) | 2011-03-18 → 2011-03-07 (-11d) |  | 0% → 25% | 220d → 219d |  | baseline start none → 2011-01-31; baseline finish none → 2011-03-18 |
| 19 | Planning complete | 2011-03-11 → 2011-02-25 (-14d) | 2011-03-11 → 2011-02-25 (-14d) |  |  |  | 11, 13, 14, 12, 17, Finalize purchase → 11, 13, 14, 12, 17 | baseline start none → 2011-03-11; baseline finish none → 2011-03-11 |
| 20 | Hire contractors for tenant improvements | 2011-02-14 → 2011-01-28 A (-17d) | 2011-02-18 → 2011-02-03 A (-15d) | 5d → 2.5d | 0% → 100% | 218d → none |  | baseline start none → 2011-02-14; baseline finish none → 2011-02-18 |
| 21 | **Prep phone system** | 2011-03-14 → 2011-02-28 (-14d) | 2012-01-20 → 2012-01-06 (-14d) |  |  |  |  | baseline start none → 2011-03-14; baseline finish none → 2012-01-20 |
| 22 | Review phone system requirements | 2011-03-14 → 2011-02-28 (-14d) | 2011-03-16 → 2011-03-02 (-14d) |  |  |  |  | baseline start none → 2011-03-14; baseline finish none → 2011-03-16 |
| 23 | Order new phone numbers | 2011-03-17 → 2011-03-03 (-14d) | 2011-03-17 → 2011-03-03 (-14d) |  |  |  |  | baseline start none → 2011-03-17; baseline finish none → 2011-03-17 |
| 24 | Order long-distance service | 2011-03-18 → 2011-03-04 (-14d) | 2011-03-18 → 2011-03-04 (-14d) |  |  |  |  | baseline start none → 2011-03-18; baseline finish none → 2011-03-18 |
| 25 | Phone lines ordered | 2011-03-18 → 2011-03-04 (-14d) | 2011-03-18 → 2011-03-04 (-14d) |  |  |  |  | baseline start none → 2011-03-18; baseline finish none → 2011-03-18 |
| 26 | **Design and construction** | 2011-03-14 → 2011-02-28 (-14d) | 2011-07-05 → 2011-06-21 (-14d) |  |  |  |  | baseline start none → 2011-03-14; baseline finish none → 2011-07-05 |
| 27 | **Design space** | 2011-03-14 → 2011-02-28 (-14d) | 2011-05-27 → 2011-05-13 (-14d) |  |  |  |  | baseline start none → 2011-03-14; baseline finish none → 2011-05-27 |
| 28 | Design office space | 2011-03-14 → 2011-02-28 (-14d) | 2011-03-31 → 2011-03-17 (-14d) |  |  |  |  | baseline start none → 2011-03-14; baseline finish none → 2011-03-31 |
| 29 | Prepare drawings | 2011-03-31 → 2011-03-17 (-14d) | 2011-04-07 → 2011-03-24 (-14d) |  |  |  |  | baseline start none → 2011-03-31; baseline finish none → 2011-04-07 |
| 30 | Design IT infrastructure | 2011-04-07 → 2011-03-24 (-14d) | 2011-04-21 → 2011-04-07 (-14d) |  |  |  |  | baseline start none → 2011-04-07; baseline finish none → 2011-04-21 |
| 31 | Obtain final budget estimates | 2011-04-21 → 2011-04-07 (-14d) | 2011-05-05 → 2011-04-21 (-14d) |  |  |  |  | baseline start none → 2011-04-21; baseline finish none → 2011-05-05 |
| 32 | Sign off on plans | 2011-05-05 → 2011-04-21 (-14d) | 2011-05-06 → 2011-04-22 (-14d) |  |  |  |  | baseline start none → 2011-05-05; baseline finish none → 2011-05-06 |
| 33 | Obtain permits | 2011-05-06 → 2011-04-22 (-14d) | 2011-05-27 → 2011-05-13 (-14d) |  |  |  |  | baseline start none → 2011-05-06; baseline finish none → 2011-05-27 |
| 34 | **Construction** | 2011-05-27 → 2011-05-13 (-14d) | 2011-06-24 → 2011-06-10 (-14d) |  |  |  |  | baseline start none → 2011-05-27; baseline finish none → 2011-06-24 |
| 35 | Demolish walls | 2011-05-27 → 2011-05-13 (-14d) | 2011-06-03 → 2011-05-20 (-14d) |  |  |  |  | baseline start none → 2011-05-27; baseline finish none → 2011-06-03 |
| 36 | Construct new walls | 2011-06-03 → 2011-05-20 (-14d) | 2011-06-24 → 2011-06-10 (-14d) |  |  |  |  | baseline start none → 2011-06-03; baseline finish none → 2011-06-24 |
| 37 | Elec, mech, HVAC | 2011-06-03 → 2011-05-20 (-14d) | 2011-06-24 → 2011-06-10 (-14d) |  |  |  |  | baseline start none → 2011-06-03; baseline finish none → 2011-06-24 |
| 38 | **Walkthrough and repair** | 2011-06-24 → 2011-06-10 (-14d) | 2011-07-05 → 2011-06-21 (-14d) |  |  |  |  | baseline start none → 2011-06-24; baseline finish none → 2011-07-05 |
| 39 | Repair issues | 2011-06-24 → 2011-06-10 (-14d) | 2011-07-01 → 2011-06-17 (-14d) |  |  |  |  | baseline start none → 2011-06-24; baseline finish none → 2011-07-01 |
| 40 | Schedule open house for employees | 2011-06-24 → 2011-06-10 (-14d) | 2011-06-27 → 2011-06-13 (-14d) |  |  |  |  | baseline start none → 2011-06-24; baseline finish none → 2011-06-27 |
| 41 | Clean new office | 2011-07-01 → 2011-06-17 (-14d) | 2011-07-04 → 2011-06-20 (-14d) |  |  |  |  | baseline start none → 2011-07-01; baseline finish none → 2011-07-04 |
| 42 | Construction complete | 2011-07-04 → 2011-06-20 (-14d) | 2011-07-04 → 2011-06-20 (-14d) |  |  |  |  | baseline start none → 2011-07-04; baseline finish none → 2011-07-04 |
| 43 | Open house | 2011-07-04 → 2011-06-20 (-14d) | 2011-07-05 → 2011-06-21 (-14d) |  |  |  |  | baseline start none → 2011-07-04; baseline finish none → 2011-07-05 |
| 44 | **Set up services** | 2011-05-09 → 2011-04-25 (-14d) | 2011-05-20 → 2011-05-06 (-14d) |  |  |  |  | baseline start none → 2011-05-09; baseline finish none → 2011-05-20 |
| 45 | Order change of address labels | 2011-05-09 → 2011-04-25 (-14d) | 2011-05-09 → 2011-04-25 (-14d) |  |  |  |  | baseline start none → 2011-05-09; baseline finish none → 2011-05-09 |
| 46 | Obtain estimates from signage companies | 2011-05-09 → 2011-04-25 (-14d) | 2011-05-17 → 2011-05-03 (-14d) |  |  |  |  | baseline start none → 2011-05-09; baseline finish none → 2011-05-17 |
| 47 | Order signage | 2011-05-18 → 2011-05-04 (-14d) | 2011-05-20 → 2011-05-06 (-14d) |  |  |  |  | baseline start none → 2011-05-18; baseline finish none → 2011-05-20 |
| 48 | Arrange external maintenance | 2011-05-09 → 2011-04-25 (-14d) | 2011-05-13 → 2011-04-29 (-14d) |  |  |  |  | baseline start none → 2011-05-09; baseline finish none → 2011-05-13 |
| 49 | Arrange for trash disposal | 2011-05-09 → 2011-04-25 (-14d) | 2011-05-09 → 2011-04-25 (-14d) |  |  |  |  | baseline start none → 2011-05-09; baseline finish none → 2011-05-09 |
| 50 | Arrange for cleaning service | 2011-05-09 → 2011-04-25 (-14d) | 2011-05-09 → 2011-04-25 (-14d) |  |  |  |  | baseline start none → 2011-05-09; baseline finish none → 2011-05-09 |
| 51 | Arrange for recycling | 2011-05-09 → 2011-04-25 (-14d) | 2011-05-09 → 2011-04-25 (-14d) |  |  |  |  | baseline start none → 2011-05-09; baseline finish none → 2011-05-09 |
| 52 | Order security system | 2011-05-09 → 2011-04-25 (-14d) | 2011-05-10 → 2011-04-26 (-14d) |  |  |  |  | baseline start none → 2011-05-09; baseline finish none → 2011-05-10 |
| 53 | Send change of address to vendors, customers, supscriptions | 2011-05-09 → 2011-04-25 (-14d) | 2011-05-09 → 2011-04-25 (-14d) |  |  |  |  | baseline start none → 2011-05-09; baseline finish none → 2011-05-09 |
| 54 | Notify all leasers of equipment move | 2011-05-09 → 2011-04-25 (-14d) | 2011-05-09 → 2011-04-25 (-14d) |  |  |  |  | baseline start none → 2011-05-09; baseline finish none → 2011-05-09 |
| 55 | Order checks with new address | 2011-05-09 → 2011-04-25 (-14d) | 2011-05-09 → 2011-04-25 (-14d) |  |  |  |  | baseline start none → 2011-05-09; baseline finish none → 2011-05-09 |
| 56 | Schedule disconnection of utilities | 2011-05-09 → 2011-04-25 (-14d) | 2011-05-09 → 2011-04-25 (-14d) |  |  |  |  | baseline start none → 2011-05-09; baseline finish none → 2011-05-09 |
| 57 | Service setup complete | 2011-05-20 → 2011-05-06 (-14d) | 2012-01-20 → 2012-01-06 (-14d) |  |  |  |  | baseline start none → 2011-05-20; baseline finish none → 2012-01-20 |
| 58 | **Create office assignment layout** | 2011-03-31 → 2011-03-17 (-14d) | 2011-04-12 → 2011-03-29 (-14d) |  |  |  |  | baseline start none → 2011-03-31; baseline finish none → 2011-04-12 |
| 59 | Assign office spaces | 2011-03-31 → 2011-03-17 (-14d) | 2011-04-07 → 2011-03-24 (-14d) |  |  |  |  | baseline start none → 2011-03-31; baseline finish none → 2011-04-07 |
| 60 | Assign new phone numbers, extensions | 2011-04-07 → 2011-03-24 (-14d) | 2011-04-11 → 2011-03-28 (-14d) |  |  |  |  | baseline start none → 2011-04-07; baseline finish none → 2011-04-11 |
| 61 | Create new office extension directory | 2011-04-11 → 2011-03-28 (-14d) | 2011-04-12 → 2011-03-29 (-14d) |  |  |  |  | baseline start none → 2011-04-11; baseline finish none → 2011-04-12 |
| 62 | Create new office layout map | 2011-04-07 → 2011-03-24 (-14d) | 2011-04-08 → 2011-03-25 (-14d) |  |  |  |  | baseline start none → 2011-04-07; baseline finish none → 2011-04-08 |
| 63 | Create new fax cover sheet | 2011-04-12 → 2011-03-29 (-14d) | 2011-04-12 → 2011-03-29 (-14d) |  |  |  |  | baseline start none → 2011-04-12; baseline finish none → 2011-04-12 |
| 64 | Office plan complete | 2011-04-12 → 2011-03-29 (-14d) | 2011-04-12 → 2011-03-29 (-14d) |  |  |  |  | baseline start none → 2011-04-12; baseline finish none → 2011-04-12 |
| 65 | **Order new stationery** | 2011-04-12 → 2011-03-29 (-14d) | 2011-04-14 → 2011-03-31 (-14d) |  |  |  |  | baseline start none → 2011-04-12; baseline finish none → 2011-04-14 |
| 66 | Order new letterhead and envelopes | 2011-04-12 → 2011-03-29 (-14d) | 2011-04-13 → 2011-03-30 (-14d) |  |  |  |  | baseline start none → 2011-04-12; baseline finish none → 2011-04-13 |
| 67 | Order new business cards | 2011-04-13 → 2011-03-30 (-14d) | 2011-04-13 → 2011-03-30 (-14d) |  |  |  |  | baseline start none → 2011-04-13; baseline finish none → 2011-04-13 |
| 68 | Order new business forms | 2011-04-13 → 2011-03-30 (-14d) | 2011-04-13 → 2011-03-30 (-14d) |  |  |  |  | baseline start none → 2011-04-13; baseline finish none → 2011-04-13 |
| 69 | Get shipping labels | 2011-04-13 → 2011-03-30 (-14d) | 2011-04-13 → 2011-03-30 (-14d) |  |  |  |  | baseline start none → 2011-04-13; baseline finish none → 2011-04-13 |
| 70 | Create map to location | 2011-04-13 → 2011-03-30 (-14d) | 2011-04-14 → 2011-03-31 (-14d) |  |  |  |  | baseline start none → 2011-04-13; baseline finish none → 2011-04-14 |

| ID | Task | Start | Finish | Other |
| --- | --- | --- | --- | --- |
| 71 | Notify post office of change of address | 2011-04-14 → 2011-03-31 (-14d) | 2011-04-14 → 2011-03-31 (-14d) | baseline start none → 2011-04-14; baseline finish none → 2011-04-14 |
| 72 | Update company website with new information | 2011-04-12 → 2011-03-29 (-14d) | 2011-04-13 → 2011-03-30 (-14d) | baseline start none → 2011-04-12; baseline finish none → 2011-04-13 |
| 73 | **Hire movers** | 2011-04-11 → 2011-03-28 (-14d) | 2011-04-27 → 2011-04-13 (-14d) | baseline start none → 2011-04-11; baseline finish none → 2011-04-27 |
| 74 | Obtain estimates from moving companies | 2011-04-11 → 2011-03-28 (-14d) | 2011-04-26 → 2011-04-12 (-14d) | baseline start none → 2011-04-11; baseline finish none → 2011-04-26 |
| 75 | Choose moving company | 2011-04-27 → 2011-04-13 (-14d) | 2011-04-27 → 2011-04-13 (-14d) | baseline start none → 2011-04-27; baseline finish none → 2011-04-27 |
| 76 | **Obtain insurance** | 2011-03-14 → 2011-02-28 (-14d) | 2011-03-30 → 2011-03-16 (-14d) | baseline start none → 2011-03-14; baseline finish none → 2011-03-30 |
| 77 | Appraise assets | 2011-03-14 → 2011-02-28 (-14d) | 2011-03-16 → 2011-03-02 (-14d) | baseline start none → 2011-03-14; baseline finish none → 2011-03-16 |
| 78 | Obtain quotes for insurance | 2011-03-17 → 2011-03-03 (-14d) | 2011-03-29 → 2011-03-15 (-14d) | baseline start none → 2011-03-17; baseline finish none → 2011-03-29 |
| 79 | Purchase insurance | 2011-03-30 → 2011-03-16 (-14d) | 2011-03-30 → 2011-03-16 (-14d) | baseline start none → 2011-03-30; baseline finish none → 2011-03-30 |
| 80 | Construction and prep complete | 2012-01-20 → 2012-01-06 (-14d) | 2012-01-20 → 2012-01-06 (-14d) | baseline start none → 2012-01-20; baseline finish none → 2012-01-20 |
| 81 | **Move** | 2012-01-23 → 2012-01-09 (-14d) | 2012-01-26 → 2012-01-12 (-14d) | baseline start none → 2012-01-23; baseline finish none → 2012-01-26 |
| 82 | Distribute new keys, cards | 2012-01-23 → 2012-01-09 (-14d) | 2012-01-23 → 2012-01-09 (-14d) | baseline start none → 2012-01-23; baseline finish none → 2012-01-23 |
| 83 | Pack and move | 2012-01-23 → 2012-01-09 (-14d) | 2012-01-26 → 2012-01-12 (-14d) | baseline start none → 2012-01-23; baseline finish none → 2012-01-26 |
| 84 | Move complete | 2012-01-26 → 2012-01-12 (-14d) | 2012-01-26 → 2012-01-12 (-14d) | baseline start none → 2012-01-26; baseline finish none → 2012-01-26 |
| 85 | **Pre-move tasks** | 2012-01-23 → 2012-01-09 (-14d) | 2012-01-26 → 2012-01-12 (-14d) | baseline start none → 2012-01-23; baseline finish none → 2012-01-26 |
| 86 | Install phone system | 2012-01-23 → 2012-01-09 (-14d) | 2012-01-26 → 2012-01-12 (-14d) | baseline start none → 2012-01-23; baseline finish none → 2012-01-26 |
| 87 | **Post-Move** | 2012-01-27 → 2012-01-13 (-14d) | 2012-02-09 → 2012-01-26 (-14d) | baseline start none → 2012-01-27; baseline finish none → 2012-02-09 |
| 88 | Check for damage and missing items | 2012-01-27 → 2012-01-13 (-14d) | 2012-02-09 → 2012-01-26 (-14d) | baseline start none → 2012-01-27; baseline finish none → 2012-02-09 |
| 89 | Schedule phone training | 2012-01-27 → 2012-01-13 (-14d) | 2012-01-27 → 2012-01-13 (-14d) | baseline start none → 2012-01-27; baseline finish none → 2012-01-27 |
| 90 | Schedule security training | 2012-01-27 → 2012-01-13 (-14d) | 2012-01-27 → 2012-01-13 (-14d) | baseline start none → 2012-01-27; baseline finish none → 2012-01-27 |
| 91 | Schedule fire drill | 2012-01-27 → 2012-01-13 (-14d) | 2012-01-27 → 2012-01-13 (-14d) | baseline start none → 2012-01-27; baseline finish none → 2012-01-27 |
| 92 | Schedule open house for clients | 2012-01-27 → 2012-01-13 (-14d) | 2012-01-27 → 2012-01-13 (-14d) | baseline start none → 2012-01-27; baseline finish none → 2012-01-27 |
| 93 | Office move complete | 2012-02-09 → 2012-01-26 (-14d) | 2012-02-09 → 2012-01-26 (-14d) | baseline start none → 2012-02-09; baseline finish none → 2012-02-09 |

## Version 5 (saved 2010-07-29, file OfficeMove_UpdateValues.mpp)

Note of the change: commit con wordpress

Last finish stays 2012-01-26. Complete tasks 10 → 9.

Changed:

| ID | Task | Start | Finish | Complete | Total float | Other |
| --- | --- | --- | --- | --- | --- | --- |
| 1 | **Planning Move** |  |  | 70% → 59% | 219d → 233d |  |
| 15 | **Identify costs** |  |  | 36% → 9% | 219d → 233d |  |
| 16 | Estimate costs for tenant improvements | 2011-01-18 A → 2011-01-18 | 2011-01-27 A → 2011-01-27 | 100% → 0% | none → 260d |  |
| 18 | Inventory office | 2011-01-18 A → 2011-01-18 |  | 25% → 0% |  |  |
| 43 | Open house |  |  |  |  | resources none → Wine [20 Gallon]; Relo PM; Relo Assistant; Office manager |
| 82 | Distribute new keys, cards |  |  |  |  | resources Office manager → Office manager; Keycard [250 Card] |

## Version 6 (saved 2010-07-29, file OfficeMove_Overtime.mpp)

Note of the change: commit con wordpress

Last finish 2012-01-26 → 2011-07-12 (-198d). Complete tasks 9 → 10.

Added:

| ID | Task | Duration | Start | Finish | Predecessors | Resources |
| --- | --- | --- | --- | --- | --- | --- |
| 10 | **Evaluate build sites** | 138d | 2010-11-01 | 2011-05-11 |  |  |
| 11 | Identify potential build sites | 25d | 2010-11-01 | 2010-12-03 |  | Relo PM |
| 12 | Identify construction needs | 30d | 2010-12-06 | 2011-02-02 | 11 | Relo PM |
| 13 | Select site | 10d | 2011-02-03 | 2011-02-16 | 12 | Relo PM |
| 14 | Finalize purchase | 60d | 2011-02-17 | 2011-05-11 | 13 | Relo PM |

Removed: 57 Service setup complete

Changed:

| ID | Task | Start | Finish | Duration | Complete | Total float | Predecessors | Other |
| --- | --- | --- | --- | --- | --- | --- | --- | --- |
| 1 | **Planning Move** |  |  |  | 59% → 70% | 233d → 74.75d |  |  |
| 20 | **Identify costs** |  |  |  | 9% → 36% | 233d → 74.75d |  |  |
| 21 | Estimate costs for tenant improvements | 2011-01-18 A | 2011-01-27 A |  | 0% → 100% | 260d → none |  |  |
| 23 | Inventory office | 2011-01-18 A |  |  | 0% → 25% | 219d → 74.75d |  |  |
| 24 | Planning complete |  |  |  |  |  | 16, 18, 19, 17, 22 → 16, 18, 19, 17, 22, 14 |  |
| 25 | Hire contractors for tenant improvements |  | 2011-02-03 A → 2011-02-01 A (-2d) |  |  |  |  |  |
| 26 | **Prep phone system** |  | 2012-01-06 → 2011-06-21 (-199d) | 225d → 81.75d |  | 14d → 0d |  |  |
| 48 | Open house |  |  |  |  | 157.25d → 15d |  | resources Wine [20 Gallon]; Relo PM; Relo Assistant; Office manager → none |
| 80 | **Obtain insurance** |  | 2011-03-16 → 2011-03-04 (-12d) | 13d → 5d |  | 212d → 75.75d |  |  |
| 82 | Obtain quotes for insurance |  | 2011-03-15 → 2011-03-03 (-12d) |  |  | 212d → 75.75d |  |  |
| 83 | Purchase insurance | 2011-03-16 → 2011-03-04 (-12d) | 2011-03-16 → 2011-03-04 (-12d) |  |  | 212d → 75.75d |  |  |
| 84 | Construction and prep complete | 2012-01-06 → 2011-06-20 (-200d) | 2012-01-06 → 2011-06-20 (-200d) |  |  |  | Service setup complete, 79, 83, 62 → 79, 83, 62, 47 |  |
| 85 | **Move** | 2012-01-09 → 2011-06-20 (-203d) | 2012-01-12 → 2011-06-29 (-197d) | 4d → 7d |  |  |  |  |
| 86 | Distribute new keys, cards | 2012-01-09 → 2011-06-20 (-203d) | 2012-01-09 → 2011-06-21 (-202d) |  |  | 3d → 6d |  | resources Office manager; Keycard [250 Card] → Office manager |
| 87 | Pack and move | 2012-01-09 → 2011-06-20 (-203d) | 2012-01-12 → 2011-06-29 (-197d) | 4d → 7d |  |  |  | resources none → Movers [300%] |
| 88 | Move complete | 2012-01-12 → 2011-06-29 (-197d) | 2012-01-12 → 2011-06-29 (-197d) |  |  |  |  |  |
| 89 | **Pre-move tasks** | 2012-01-09 → 2011-06-20 (-203d) | 2012-01-12 → 2011-06-24 (-202d) |  |  | 10d → 12d |  |  |
| 90 | Install phone system | 2012-01-09 → 2011-06-20 (-203d) | 2012-01-12 → 2011-06-24 (-202d) |  |  | 10d → 12d |  |  |
| 91 | **Post-Move** | 2012-01-13 → 2011-06-29 (-198d) | 2012-01-26 → 2011-07-12 (-198d) | 10d → 9d |  |  |  |  |
| 92 | Check for damage and missing items | 2012-01-13 → 2011-06-29 (-198d) | 2012-01-26 → 2011-07-12 (-198d) | 10d → 9d |  |  |  |  |
| 93 | Schedule phone training | 2012-01-13 → 2011-06-29 (-198d) | 2012-01-13 → 2011-06-30 (-197d) |  |  | 9d → 8d |  |  |
| 94 | Schedule security training | 2012-01-13 → 2011-06-29 (-198d) | 2012-01-13 → 2011-06-30 (-197d) |  |  | 9d → 8d |  |  |
| 95 | Schedule fire drill | 2012-01-13 → 2011-06-29 (-198d) | 2012-01-13 → 2011-06-30 (-197d) |  |  | 9d → 8d |  |  |
| 96 | Schedule open house for clients | 2012-01-13 → 2011-06-29 (-198d) | 2012-01-13 → 2011-06-30 (-197d) |  |  | 9d → 8d |  |  |
| 97 | Office move complete | 2012-01-26 → 2011-07-12 (-198d) | 2012-01-26 → 2011-07-12 (-198d) |  |  |  |  |  |

## Version 7 (saved 2010-07-29, file OfficeMove_UpdateCosts.mpp)

Note of the change: commit con wordpress

Last finish 2011-07-12 → 2012-01-26 (+198d). Complete tasks 10 → 9.

Added:

| ID | Task | Duration | Start | Finish | Predecessors | Constraint |
| --- | --- | --- | --- | --- | --- | --- |
| 57 | Service setup complete | 0d | 2011-05-06 | 2012-01-06 | 44 | start no earlier than 2010-09-20 |

Removed: 10 Evaluate build sites; 11 Identify potential build sites; 12 Identify construction needs; 13 Select site; 14 Finalize purchase

Changed:

| ID | Task | Start | Finish | Duration | Complete | Total float | Predecessors | Other |
| --- | --- | --- | --- | --- | --- | --- | --- | --- |
| 1 | **Planning Move** |  |  |  | 70% → 59% | 74.75d → 233d |  |  |
| 15 | **Identify costs** |  |  |  | 36% → 9% | 74.75d → 233d |  |  |
| 16 | Estimate costs for tenant improvements | 2011-01-18 A → 2011-01-18 | 2011-01-27 A → 2011-01-27 |  | 100% → 0% | none → 260d |  | resources Office manager; Relo Assistant → Office manager; Relo Assistant; Lodging [0.1%]; Meals [0.1%] |
| 18 | Inventory office | 2011-01-18 A → 2011-01-18 |  |  | 25% → 0% | 74.75d → 219d |  |  |
| 19 | Planning complete |  |  |  |  |  | 11, 13, 14, 12, 17, Finalize purchase → 11, 13, 14, 12, 17 |  |
| 20 | Hire contractors for tenant improvements |  | 2011-02-01 A → 2011-02-03 A (+2d) |  |  |  |  |  |
| 21 | **Prep phone system** |  | 2011-06-21 → 2012-01-06 (+199d) | 81.75d → 225d |  | 0d → 14d |  |  |
| 43 | Open house |  |  |  |  | 15d → 157.25d |  | resources none → Wine [20 Gallon]; Relo PM; Relo Assistant; Office manager |
| 76 | **Obtain insurance** |  | 2011-03-04 → 2011-03-16 (+12d) | 5d → 13d |  | 75.75d → 212d |  |  |
| 78 | Obtain quotes for insurance |  | 2011-03-03 → 2011-03-15 (+12d) |  |  | 75.75d → 212d |  |  |
| 79 | Purchase insurance | 2011-03-04 → 2011-03-16 (+12d) | 2011-03-04 → 2011-03-16 (+12d) |  |  | 75.75d → 212d |  |  |
| 80 | Construction and prep complete | 2011-06-20 → 2012-01-06 (+200d) | 2011-06-20 → 2012-01-06 (+200d) |  |  |  | 75, 79, 58, 42 → 57, 75, 79, 58 |  |
| 81 | **Move** | 2011-06-20 → 2012-01-09 (+203d) | 2011-06-29 → 2012-01-12 (+197d) | 7d → 4d |  |  |  |  |
| 82 | Distribute new keys, cards | 2011-06-20 → 2012-01-09 (+203d) | 2011-06-21 → 2012-01-09 (+202d) |  |  | 6d → 3d |  | resources Office manager → Office manager; Keycard [250 Card] |
| 83 | Pack and move | 2011-06-20 → 2012-01-09 (+203d) | 2011-06-29 → 2012-01-12 (+197d) | 7d → 4d |  |  |  | resources Movers [300%] → none |
| 84 | Move complete | 2011-06-29 → 2012-01-12 (+197d) | 2011-06-29 → 2012-01-12 (+197d) |  |  |  |  |  |
| 85 | **Pre-move tasks** | 2011-06-20 → 2012-01-09 (+203d) | 2011-06-24 → 2012-01-12 (+202d) |  |  | 12d → 10d |  |  |
| 86 | Install phone system | 2011-06-20 → 2012-01-09 (+203d) | 2011-06-24 → 2012-01-12 (+202d) |  |  | 12d → 10d |  |  |
| 87 | **Post-Move** | 2011-06-29 → 2012-01-13 (+198d) | 2011-07-12 → 2012-01-26 (+198d) | 9d → 10d |  |  |  |  |
| 88 | Check for damage and missing items | 2011-06-29 → 2012-01-13 (+198d) | 2011-07-12 → 2012-01-26 (+198d) | 9d → 10d |  |  |  |  |
| 89 | Schedule phone training | 2011-06-29 → 2012-01-13 (+198d) | 2011-06-30 → 2012-01-13 (+197d) |  |  | 8d → 9d |  |  |
| 90 | Schedule security training | 2011-06-29 → 2012-01-13 (+198d) | 2011-06-30 → 2012-01-13 (+197d) |  |  | 8d → 9d |  |  |
| 91 | Schedule fire drill | 2011-06-29 → 2012-01-13 (+198d) | 2011-06-30 → 2012-01-13 (+197d) |  |  | 8d → 9d |  |  |
| 92 | Schedule open house for clients | 2011-06-29 → 2012-01-13 (+198d) | 2011-06-30 → 2012-01-13 (+197d) |  |  | 8d → 9d |  |  |
| 93 | Office move complete | 2011-07-12 → 2012-01-26 (+198d) | 2011-07-12 → 2012-01-26 (+198d) |  |  |  |  |  |

## Version 8 (saved 2010-07-29, file OfficeMove_Progress.mpp)

Note of the change: commit con wordpress

Last finish stays 2012-01-26. Complete tasks 9 → 10.

Added:

| ID | Task | Duration | Start | Finish | Predecessors | Resources |
| --- | --- | --- | --- | --- | --- | --- |
| 10 | **Evaluate build sites** | 138d | 2010-11-01 | 2011-05-11 |  |  |
| 11 | Identify potential build sites | 25d | 2010-11-01 | 2010-12-03 |  | Relo PM |
| 12 | Identify construction needs | 30d | 2010-12-06 | 2011-02-02 | 11 | Relo PM |
| 13 | Select site | 10d | 2011-02-03 | 2011-02-16 | 12 | Relo PM |
| 14 | Finalize purchase | 60d | 2011-02-17 | 2011-05-11 | 13 | Relo PM |

Changed:

| ID | Task | Start | Finish | Complete | Total float | Predecessors | Other |
| --- | --- | --- | --- | --- | --- | --- | --- |
| 1 | **Planning Move** |  |  | 59% → 70% | 233d → 219d |  |  |
| 20 | **Identify costs** |  |  | 9% → 36% | 233d → 219d |  |  |
| 21 | Estimate costs for tenant improvements | 2011-01-18 A | 2011-01-27 A | 0% → 100% | 260d → none |  | resources Office manager; Relo Assistant; Lodging [0.1%]; Meals [0.1%] → Office manager; Relo Assistant |
| 23 | Inventory office | 2011-01-18 A |  | 0% → 25% |  |  |  |
| 24 | Planning complete |  |  |  |  | 16, 18, 19, 17, 22 → 16, 18, 19, 17, 22, 14 |  |
| 48 | Open house |  |  |  |  |  | resources Wine [20 Gallon]; Relo PM; Relo Assistant; Office manager → none |
| 87 | Distribute new keys, cards |  |  |  |  |  | resources Office manager; Keycard [250 Card] → Office manager |

## Version 9 (data date 2010-10-12, saved 2010-07-29, file OfficeMove_EarnedValue.mpp)

Note of the change: commit con wordpress

Last finish stays 2012-01-26.

Removed: 10 Evaluate build sites; 11 Identify potential build sites; 12 Identify construction needs; 13 Select site; 14 Finalize purchase

Changed:

| ID | Task | Predecessors |
| --- | --- | --- |
| 19 | Planning complete | 11, 13, 14, 12, 17, Finalize purchase → 11, 13, 14, 12, 17 |
