# Office Move

How a schedule from MS Project changed from version to version. A marks actual dates.

## Version 1 (data date 2010-11-05, saved 2010-07-29, file OfficeMove_Problems.mpp)

Note of the change: commit con wordpress

| ID | WBS | Task | Duration | Start | Finish | Predecessors | Complete | Total float | Constraint |
| --- | --- | --- | --- | --- | --- | --- | --- | --- | --- |
| 1 | 1 | **Planning Move** | 113d | 2010-11-01 A | 2011-04-06 |  | 37% | 220d |  |
| 2 | 1.1 | **Document requirements** | 54.5d | 2010-11-01 A | 2011-01-14 |  | 99% | 0d |  |
| 3 |  | Identify physical requirements | 30d | 2010-11-01 A | 2010-12-10 A |  | 100% |  |  |
| 4 |  | Draft the budget | 10d | 2010-12-02 A | 2010-12-15 A | 3FS-2.5% | 100% |  |  |
| 5 | 1.1.3 | **Mgt meeting** | 6d | 2010-12-10 | 2010-12-17 |  | 93% |  |  |
| 6 |  | Prepare mgt presentation | 3d | 2010-12-16 A | 2010-12-23 A | 4 | 100% |  |  |
| 7 |  | Prepare materials | 4d | 2010-12-24 A | 2011-01-10 A | 6 | 100% |  |  |
| 8 |  | Present to mgt | 4h | 2011-01-14 | 2011-01-14 | 7 |  |  |  |
| 9 | 1.2 | **Choose new location** | 57d | 2011-01-04 A | 2011-03-23 |  | 24% | 5d |  |
| 10 | 1.2.1 | **Evaluate lease sites** | 57d | 2011-01-04 A | 2011-03-23 |  | 24% | 5d |  |
| 11 |  | Identify potential sites | 25d | 2011-01-04 A | 2011-02-07 | 4 | 50% | 0d |  |
| 12 |  | Identify tenant improvements | 7d | 2011-02-08 | 2011-02-16 | 11 |  | 5d |  |
| 13 |  | Select site | 10d | 2011-02-17 | 2011-03-02 | 12, 4 |  | 5d |  |
| 14 |  | Finalize lease | 10d | 2011-03-03 | 2011-03-23 | 13 |  | 5d |  |
| 15 | 1.3 | **Identify costs** | 42d | 2011-02-08 | 2011-04-06 |  |  | 0d |  |
| 16 |  | Estimate costs for tenant improvements | 10d | 2011-02-17 | 2011-03-02 | 12 |  | 218d |  |
| 17 |  | Identify addl costs (furniture, equipment) | 20d | 2011-02-08 | 2011-03-30 | 11 |  | 0d |  |
| 18 |  | Inventory office | 25d | 2011-02-17 | 2011-04-06 | 12 |  | 220d |  |
| 19 |  | Planning complete | 0d | 2011-03-30 | 2011-03-30 | 11, 13, 14, 12, 17 |  | 0d |  |
| 20 |  | Hire contractors for tenant improvements | 5d | 2011-03-03 | 2011-03-09 | 16 |  | 218d |  |
| 21 | 2 | **Prep phone system** | 225d | 2011-03-31 | 2012-02-08 | 19 |  | 14d |  |
| 22 |  | Review phone system requirements | 3d | 2011-03-31 | 2011-04-04 |  |  | 230d |  |
| 23 |  | Order new phone numbers | 1d | 2011-04-05 | 2011-04-05 | 22 |  | 230d |  |
| 24 |  | Order long-distance service | 1d | 2011-04-06 | 2011-04-06 | 23 |  | 230d |  |
| 25 |  | Phone lines ordered | 0d | 2011-04-06 | 2011-04-06 | 24 |  | 230d |  |
| 26 | 2.5 | **Design and construction** | 81.75d | 2011-03-31 | 2011-07-22 |  |  | 148.25d |  |
| 27 | 2.5.1 | **Design space** | 54.75d | 2011-03-31 | 2011-06-15 |  |  | 148.25d |  |
| 28 |  | Design office space | 13.75d | 2011-03-31 | 2011-04-19 | 19 |  | 148.25d |  |
| 29 |  | Prepare drawings | 5d | 2011-04-19 | 2011-04-26 | 28 |  | 148.25d |  |
| 30 |  | Design IT infrastructure | 10d | 2011-04-26 | 2011-05-10 | 29 |  | 148.25d |  |
| 31 |  | Obtain final budget estimates | 10d | 2011-05-10 | 2011-05-24 | 30 |  | 148.25d |  |
| 32 |  | Sign off on plans | 1d | 2011-05-24 | 2011-05-25 | 31 |  | 148.25d |  |
| 33 |  | Obtain permits | 3w | 2011-05-25 | 2011-06-15 | 32 |  | 148.25d |  |
| 34 | 2.5.2 | **Construction** | 20d | 2011-06-15 | 2011-07-13 | 33 |  | 148.25d |  |
| 35 |  | Demolish walls | 5d | 2011-06-15 | 2011-06-22 | 20 |  | 148.25d |  |
| 36 |  | Construct new walls | 15d | 2011-06-22 | 2011-07-13 | 35 |  | 148.25d |  |
| 37 |  | Elec, mech, HVAC | 15d | 2011-06-22 | 2011-07-13 | 35 |  | 148.25d |  |
| 38 | 2.5.3 | **Walkthrough and repair** | 7d | 2011-07-13 | 2011-07-22 | 37, 36 |  | 148.25d |  |
| 39 |  | Repair issues | 5d | 2011-07-13 | 2011-07-20 |  |  | 148.25d |  |
| 40 |  | Schedule open house for employees | 1d | 2011-07-13 | 2011-07-14 |  |  | 163.25d |  |
| 41 |  | Clean new office | 1d | 2011-07-20 | 2011-07-21 | 39 |  | 148.25d |  |
| 42 |  | Construction complete | 0d | 2011-07-21 | 2011-07-21 | 41 |  | 157.25d |  |
| 43 |  | Open house | 1d | 2011-07-21 | 2011-07-22 | 42 |  | 157.25d |  |
| 44 | 2.6 | **Set up services** | 10d | 2011-05-26 | 2011-06-08 | 19FS+2mo |  | 0d |  |
| 45 |  | Order change of address labels | 1d | 2011-05-26 | 2011-05-26 |  |  | 9d |  |
| 46 |  | Obtain estimates from signage companies | 7d | 2011-05-26 | 2011-06-03 |  |  | 0d |  |
| 47 |  | Order signage | 3d | 2011-06-06 | 2011-06-08 | 46 |  | 0d |  |
| 48 |  | Arrange external maintenance | 5d | 2011-05-26 | 2011-06-01 |  |  | 5d |  |
| 49 |  | Arrange for trash disposal | 1d | 2011-05-26 | 2011-05-26 |  |  | 9d |  |
| 50 |  | Arrange for cleaning service | 1d | 2011-05-26 | 2011-05-26 |  |  | 9d |  |
| 51 |  | Arrange for recycling | 1d | 2011-05-26 | 2011-05-26 |  |  | 9d |  |
| 52 |  | Order security system | 2d | 2011-05-26 | 2011-05-27 |  |  | 8d |  |
| 53 |  | Send change of address to vendors, customers, supscriptions | 1d | 2011-05-26 | 2011-05-26 |  |  | 9d |  |
| 54 |  | Notify all leasers of equipment move | 1d | 2011-05-26 | 2011-05-26 |  |  | 9d |  |
| 55 |  | Order checks with new address | 1d | 2011-05-26 | 2011-05-26 |  |  | 9d |  |
| 56 |  | Schedule disconnection of utilities | 1d | 2011-05-26 | 2011-05-26 |  |  | 9d |  |
| 57 |  | Service setup complete | 0d | 2011-06-08 | 2012-02-08 | 44 |  | 0d | start no earlier than 2010-09-20 |
| 58 | 2.8 | **Create office assignment layout** | 8.12d | 2011-04-19 | 2011-04-29 |  |  | 203.12d |  |
| 59 |  | Assign office spaces | 5d | 2011-04-19 | 2011-04-26 | 28 |  | 203.12d |  |
| 60 |  | Assign new phone numbers, extensions | 2d | 2011-04-26 | 2011-04-28 | 59 |  | 203.12d |  |
| 61 |  | Create new office extension directory | 1d | 2011-04-28 | 2011-04-29 | 60 |  | 203.12d |  |
| 62 |  | Create new office layout map | 1d | 2011-04-26 | 2011-04-27 | 59 |  | 205.25d |  |
| 63 |  | Create new fax cover sheet | 0.12d | 2011-04-29 | 2011-04-29 | 61 |  | 203.12d |  |
| 64 |  | Office plan complete | 0d | 2011-04-29 | 2011-04-29 | 62, 61, 63 |  | 203.12d |  |
| 65 | 2.9 | **Order new stationery** | 1.5d | 2011-04-29 | 2011-05-03 | 64 |  | 205.62d |  |
| 66 |  | Order new letterhead and envelopes | 0.25d | 2011-04-29 | 2011-05-02 |  |  | 205.62d |  |
| 67 |  | Order new business cards | 0.25d | 2011-05-02 | 2011-05-02 | 66 |  | 205.62d |  |
| 68 |  | Order new business forms | 0.25d | 2011-05-02 | 2011-05-02 | 67 |  | 205.62d |  |
| 69 |  | Get shipping labels | 0.25d | 2011-05-02 | 2011-05-02 | 68 |  | 205.62d |  |
| 70 |  | Create map to location | 0.25d | 2011-05-02 | 2011-05-03 | 69 |  | 205.62d |  |

| ID | WBS | Task | Duration | Start | Finish | Predecessors | Total float |
| --- | --- | --- | --- | --- | --- | --- | --- |
| 71 |  | Notify post office of change of address | 0.25d | 2011-05-03 | 2011-05-03 | 70 | 205.62d |
| 72 |  | Update company website with new information | 1d | 2011-04-29 | 2011-05-02 |  | 206.12d |
| 73 | 2.10 | **Hire movers** | 13d | 2011-04-28 | 2011-05-16 | 19FS+1mo | 192d |
| 74 |  | Obtain estimates from moving companies | 12d | 2011-04-28 | 2011-05-13 |  | 192d |
| 75 |  | Choose moving company | 1d | 2011-05-16 | 2011-05-16 | 74 | 192d |
| 76 | 2.11 | **Obtain insurance** | 13d | 2011-03-31 | 2011-04-18 |  | 212d |
| 77 |  | Appraise assets | 3d | 2011-03-31 | 2011-04-04 |  | 212d |
| 78 |  | Obtain quotes for insurance | 1d | 2011-04-05 | 2011-04-15 | 77 | 212d |
| 79 |  | Purchase insurance | 1d | 2011-04-18 | 2011-04-18 | 78 | 212d |
| 80 |  | Construction and prep complete | 0d | 2012-02-08 | 2012-02-08 | 57, 75, 79, 58 | 0d |
| 81 | 4 | **Move** | 4d | 2012-02-09 | 2012-02-14 | 80 | 0d |
| 82 |  | Distribute new keys, cards | 1d | 2012-02-09 | 2012-02-09 |  | 3d |
| 83 |  | Pack and move | 4d | 2012-02-09 | 2012-02-14 | 18 | 0d |
| 84 |  | Move complete | 0d | 2012-02-14 | 2012-02-14 | 60, 82, 66, 67, 68, 39, 41, 71, 72, 56, 83, 18 | 0d |
| 85 | 5 | **Pre-move tasks** | 4d | 2012-02-09 | 2012-02-14 | 81SS | 10d |
| 86 |  | Install phone system | 4d | 2012-02-09 | 2012-02-14 | 25 | 10d |
| 87 | 6 | **Post-Move** | 10d | 2012-02-15 | 2012-02-28 | 84 | 0d |
| 88 |  | Check for damage and missing items | 10d | 2012-02-15 | 2012-02-28 |  | 0d |
| 89 |  | Schedule phone training | 1d | 2012-02-15 | 2012-02-15 |  | 9d |
| 90 |  | Schedule security training | 1d | 2012-02-15 | 2012-02-15 |  | 9d |
| 91 |  | Schedule fire drill | 1d | 2012-02-15 | 2012-02-15 |  | 9d |
| 92 |  | Schedule open house for clients | 1d | 2012-02-15 | 2012-02-15 |  | 9d |
| 93 |  | Office move complete | 0d | 2012-02-28 | 2012-02-28 | 84, 88, 89, 90, 91, 92 | 0d |

## Version 2 (saved 2010-07-29, file OfficeMove_Progress.mpp)

Note of the change: commit con wordpress

Last finish 2012-02-28 → 2012-01-26 (-33d). Complete tasks 4 → 10.

Added:

| ID | Task | Duration | Start | Finish | Predecessors | Resources |
| --- | --- | --- | --- | --- | --- | --- |
| 10 | **Evaluate build sites** | 138d | 2010-11-01 | 2011-05-11 |  |  |
| 11 | Identify potential build sites | 25d | 2010-11-01 | 2010-12-03 |  | Relo PM |
| 12 | Identify construction needs | 30d | 2010-12-06 | 2011-02-02 | 11 | Relo PM |
| 13 | Select site | 10d | 2011-02-03 | 2011-02-16 | 12 | Relo PM |
| 14 | Finalize purchase | 60d | 2011-02-17 | 2011-05-11 | 13 | Relo PM |

Changed:

| ID | Task | Start | Finish | Duration | Complete | Total float | Predecessors | Other |
| --- | --- | --- | --- | --- | --- | --- | --- | --- |
| 1 | **Planning Move** |  | 2011-04-06 → 2011-03-07 (-30d) | 113d → 91d | 37% → 70% | 220d → 219d |  |  |
| 2 | **Document requirements** |  | 2011-01-14 → 2010-12-17 A (-28d) | 54.5d → 35d | 99% → 100% | 0d → none |  |  |
| 3 | Identify physical requirements |  | 2010-12-10 A → 2010-11-23 A (-17d) | 30d → 17d |  |  |  |  |
| 4 | Draft the budget | 2010-12-02 A → 2010-11-12 A (-20d) | 2010-12-15 A → 2010-11-24 A (-21d) | 10d → 9d |  |  |  |  |
| 5 | **Mgt meeting** | 2010-12-10 A | 2010-12-17 A |  | 93% → 100% |  |  |  |
| 6 | Prepare mgt presentation | 2010-12-16 A → 2010-12-10 A (-6d) | 2010-12-23 A → 2010-12-14 A (-9d) |  |  |  |  |  |
| 7 | Prepare materials | 2010-12-24 A → 2010-12-15 A (-9d) | 2011-01-10 A → 2010-12-15 A (-26d) | 4d → 1d |  |  |  |  |
| 8 | Present to mgt | 2011-01-14 → 2010-12-17 A (-28d) | 2011-01-14 → 2010-12-17 A (-28d) |  | 0% → 100% |  |  |  |
| 9 | **Choose new location** | 2011-01-04 A → 2010-11-29 A (-36d) | 2011-03-23 → 2011-02-14 (-37d) | 57d → 56d | 24% → 88% | 5d → 9d |  |  |
| 15 | **Evaluate lease sites** | 2011-01-04 A → 2010-11-29 A (-36d) | 2011-03-23 → 2011-02-14 (-37d) | 57d → 56d | 24% → 88% | 5d → 9d |  |  |
| 16 | Identify potential sites | 2011-01-04 A → 2010-11-29 A (-36d) | 2011-02-07 → 2011-01-05 A (-33d) | 25d → 20d | 50% → 100% | 0d → none |  |  |
| 17 | Identify tenant improvements | 2011-02-08 → 2011-01-06 A (-33d) | 2011-02-16 → 2011-01-17 A (-30d) | 7d → 8d | 0% → 100% | 5d → none |  | resources Relo Assistant → Relo PM [50%]; Relo Assistant [50%] |
| 18 | Select site | 2011-02-17 → 2011-01-18 A (-30d) | 2011-03-02 → 2011-01-24 A (-37d) | 10d → 5d | 0% → 100% | 5d → none |  | resources Relo PM [50%]; Relo Assistant [50%] → Relo PM |
| 19 | Finalize lease | 2011-03-03 → 2011-01-25 A (-37d) | 2011-03-23 → 2011-02-14 (-37d) |  | 0% → 50% | 5d → 9d |  |  |
| 20 | **Identify costs** | 2011-02-08 → 2011-01-06 A (-33d) | 2011-04-06 → 2011-03-07 (-30d) | 42d → 43d | 0% → 36% | 0d → 219d |  |  |
| 21 | Estimate costs for tenant improvements | 2011-02-17 → 2011-01-18 A (-30d) | 2011-03-02 → 2011-01-27 A (-34d) | 10d → 8d | 0% → 100% | 218d → none |  |  |
| 22 | Identify addl costs (furniture, equipment) | 2011-02-08 → 2011-01-06 A (-33d) | 2011-03-30 → 2011-02-25 (-33d) |  | 0% → 25% |  |  |  |
| 23 | Inventory office | 2011-02-17 → 2011-01-18 A (-30d) | 2011-04-06 → 2011-03-07 (-30d) |  | 0% → 25% | 220d → 219d |  |  |
| 24 | Planning complete | 2011-03-30 → 2011-02-25 (-33d) | 2011-03-30 → 2011-02-25 (-33d) |  |  |  | 16, 18, 19, 17, 22 → 16, 18, 19, 17, 22, 14 |  |
| 25 | Hire contractors for tenant improvements | 2011-03-03 → 2011-01-28 A (-34d) | 2011-03-09 → 2011-02-03 A (-34d) | 5d → 2.5d | 0% → 100% | 218d → none |  |  |
| 26 | **Prep phone system** | 2011-03-31 → 2011-02-28 (-31d) | 2012-02-08 → 2012-01-06 (-33d) |  |  |  |  |  |
| 27 | Review phone system requirements | 2011-03-31 → 2011-02-28 (-31d) | 2011-04-04 → 2011-03-02 (-33d) |  |  |  |  |  |
| 28 | Order new phone numbers | 2011-04-05 → 2011-03-03 (-33d) | 2011-04-05 → 2011-03-03 (-33d) |  |  |  |  |  |
| 29 | Order long-distance service | 2011-04-06 → 2011-03-04 (-33d) | 2011-04-06 → 2011-03-04 (-33d) |  |  |  |  |  |
| 30 | Phone lines ordered | 2011-04-06 → 2011-03-04 (-33d) | 2011-04-06 → 2011-03-04 (-33d) |  |  |  |  |  |
| 31 | **Design and construction** | 2011-03-31 → 2011-02-28 (-31d) | 2011-07-22 → 2011-06-21 (-31d) |  |  |  |  |  |
| 32 | **Design space** | 2011-03-31 → 2011-02-28 (-31d) | 2011-06-15 → 2011-05-13 (-33d) |  |  |  |  |  |
| 33 | Design office space | 2011-03-31 → 2011-02-28 (-31d) | 2011-04-19 → 2011-03-17 (-33d) |  |  |  |  |  |
| 34 | Prepare drawings | 2011-04-19 → 2011-03-17 (-33d) | 2011-04-26 → 2011-03-24 (-33d) |  |  |  |  |  |
| 35 | Design IT infrastructure | 2011-04-26 → 2011-03-24 (-33d) | 2011-05-10 → 2011-04-07 (-33d) |  |  |  |  |  |
| 36 | Obtain final budget estimates | 2011-05-10 → 2011-04-07 (-33d) | 2011-05-24 → 2011-04-21 (-33d) |  |  |  |  |  |
| 37 | Sign off on plans | 2011-05-24 → 2011-04-21 (-33d) | 2011-05-25 → 2011-04-22 (-33d) |  |  |  |  |  |
| 38 | Obtain permits | 2011-05-25 → 2011-04-22 (-33d) | 2011-06-15 → 2011-05-13 (-33d) |  |  |  |  |  |
| 39 | **Construction** | 2011-06-15 → 2011-05-13 (-33d) | 2011-07-13 → 2011-06-10 (-33d) |  |  |  |  |  |
| 40 | Demolish walls | 2011-06-15 → 2011-05-13 (-33d) | 2011-06-22 → 2011-05-20 (-33d) |  |  |  |  |  |
| 41 | Construct new walls | 2011-06-22 → 2011-05-20 (-33d) | 2011-07-13 → 2011-06-10 (-33d) |  |  |  |  |  |
| 42 | Elec, mech, HVAC | 2011-06-22 → 2011-05-20 (-33d) | 2011-07-13 → 2011-06-10 (-33d) |  |  |  |  |  |
| 43 | **Walkthrough and repair** | 2011-07-13 → 2011-06-10 (-33d) | 2011-07-22 → 2011-06-21 (-31d) |  |  |  |  |  |
| 44 | Repair issues | 2011-07-13 → 2011-06-10 (-33d) | 2011-07-20 → 2011-06-17 (-33d) |  |  |  |  |  |
| 45 | Schedule open house for employees | 2011-07-13 → 2011-06-10 (-33d) | 2011-07-14 → 2011-06-13 (-31d) |  |  |  |  |  |
| 46 | Clean new office | 2011-07-20 → 2011-06-17 (-33d) | 2011-07-21 → 2011-06-20 (-31d) |  |  |  |  |  |
| 47 | Construction complete | 2011-07-21 → 2011-06-20 (-31d) | 2011-07-21 → 2011-06-20 (-31d) |  |  |  |  |  |
| 48 | Open house | 2011-07-21 → 2011-06-20 (-31d) | 2011-07-22 → 2011-06-21 (-31d) |  |  |  |  |  |
| 49 | **Set up services** | 2011-05-26 → 2011-04-25 (-31d) | 2011-06-08 → 2011-05-06 (-33d) |  |  |  |  |  |
| 50 | Order change of address labels | 2011-05-26 → 2011-04-25 (-31d) | 2011-05-26 → 2011-04-25 (-31d) |  |  |  |  |  |
| 51 | Obtain estimates from signage companies | 2011-05-26 → 2011-04-25 (-31d) | 2011-06-03 → 2011-05-03 (-31d) |  |  |  |  |  |
| 52 | Order signage | 2011-06-06 → 2011-05-04 (-33d) | 2011-06-08 → 2011-05-06 (-33d) |  |  |  |  |  |
| 53 | Arrange external maintenance | 2011-05-26 → 2011-04-25 (-31d) | 2011-06-01 → 2011-04-29 (-33d) |  |  |  |  |  |
| 54 | Arrange for trash disposal | 2011-05-26 → 2011-04-25 (-31d) | 2011-05-26 → 2011-04-25 (-31d) |  |  |  |  |  |
| 55 | Arrange for cleaning service | 2011-05-26 → 2011-04-25 (-31d) | 2011-05-26 → 2011-04-25 (-31d) |  |  |  |  |  |
| 56 | Arrange for recycling | 2011-05-26 → 2011-04-25 (-31d) | 2011-05-26 → 2011-04-25 (-31d) |  |  |  |  |  |
| 57 | Order security system | 2011-05-26 → 2011-04-25 (-31d) | 2011-05-27 → 2011-04-26 (-31d) |  |  |  |  |  |
| 58 | Send change of address to vendors, customers, supscriptions | 2011-05-26 → 2011-04-25 (-31d) | 2011-05-26 → 2011-04-25 (-31d) |  |  |  |  |  |
| 59 | Notify all leasers of equipment move | 2011-05-26 → 2011-04-25 (-31d) | 2011-05-26 → 2011-04-25 (-31d) |  |  |  |  |  |
| 60 | Order checks with new address | 2011-05-26 → 2011-04-25 (-31d) | 2011-05-26 → 2011-04-25 (-31d) |  |  |  |  |  |
| 61 | Schedule disconnection of utilities | 2011-05-26 → 2011-04-25 (-31d) | 2011-05-26 → 2011-04-25 (-31d) |  |  |  |  |  |
| 62 | Service setup complete | 2011-06-08 → 2011-05-06 (-33d) | 2012-02-08 → 2012-01-06 (-33d) |  |  |  |  |  |
| 63 | **Create office assignment layout** | 2011-04-19 → 2011-03-17 (-33d) | 2011-04-29 → 2011-03-29 (-31d) |  |  |  |  |  |
| 64 | Assign office spaces | 2011-04-19 → 2011-03-17 (-33d) | 2011-04-26 → 2011-03-24 (-33d) |  |  |  |  |  |
| 65 | Assign new phone numbers, extensions | 2011-04-26 → 2011-03-24 (-33d) | 2011-04-28 → 2011-03-28 (-31d) |  |  |  |  |  |
| 66 | Create new office extension directory | 2011-04-28 → 2011-03-28 (-31d) | 2011-04-29 → 2011-03-29 (-31d) |  |  |  |  |  |
| 67 | Create new office layout map | 2011-04-26 → 2011-03-24 (-33d) | 2011-04-27 → 2011-03-25 (-33d) |  |  |  |  |  |
| 68 | Create new fax cover sheet | 2011-04-29 → 2011-03-29 (-31d) | 2011-04-29 → 2011-03-29 (-31d) |  |  |  |  |  |
| 69 | Office plan complete | 2011-04-29 → 2011-03-29 (-31d) | 2011-04-29 → 2011-03-29 (-31d) |  |  |  |  |  |
| 70 | **Order new stationery** | 2011-04-29 → 2011-03-29 (-31d) | 2011-05-03 → 2011-03-31 (-33d) |  |  |  |  |  |
| 71 | Order new letterhead and envelopes | 2011-04-29 → 2011-03-29 (-31d) | 2011-05-02 → 2011-03-30 (-33d) |  |  |  |  |  |
| 72 | Order new business cards | 2011-05-02 → 2011-03-30 (-33d) | 2011-05-02 → 2011-03-30 (-33d) |  |  |  |  |  |
| 73 | Order new business forms | 2011-05-02 → 2011-03-30 (-33d) | 2011-05-02 → 2011-03-30 (-33d) |  |  |  |  |  |
| 74 | Get shipping labels | 2011-05-02 → 2011-03-30 (-33d) | 2011-05-02 → 2011-03-30 (-33d) |  |  |  |  |  |
| 75 | Create map to location | 2011-05-02 → 2011-03-30 (-33d) | 2011-05-03 → 2011-03-31 (-33d) |  |  |  |  |  |

| ID | Task | Start | Finish |
| --- | --- | --- | --- |
| 76 | Notify post office of change of address | 2011-05-03 → 2011-03-31 (-33d) | 2011-05-03 → 2011-03-31 (-33d) |
| 77 | Update company website with new information | 2011-04-29 → 2011-03-29 (-31d) | 2011-05-02 → 2011-03-30 (-33d) |
| 78 | **Hire movers** | 2011-04-28 → 2011-03-28 (-31d) | 2011-05-16 → 2011-04-13 (-33d) |
| 79 | Obtain estimates from moving companies | 2011-04-28 → 2011-03-28 (-31d) | 2011-05-13 → 2011-04-12 (-31d) |
| 80 | Choose moving company | 2011-05-16 → 2011-04-13 (-33d) | 2011-05-16 → 2011-04-13 (-33d) |
| 81 | **Obtain insurance** | 2011-03-31 → 2011-02-28 (-31d) | 2011-04-18 → 2011-03-16 (-33d) |
| 82 | Appraise assets | 2011-03-31 → 2011-02-28 (-31d) | 2011-04-04 → 2011-03-02 (-33d) |
| 83 | Obtain quotes for insurance | 2011-04-05 → 2011-03-03 (-33d) | 2011-04-15 → 2011-03-15 (-31d) |
| 84 | Purchase insurance | 2011-04-18 → 2011-03-16 (-33d) | 2011-04-18 → 2011-03-16 (-33d) |
| 85 | Construction and prep complete | 2012-02-08 → 2012-01-06 (-33d) | 2012-02-08 → 2012-01-06 (-33d) |
| 86 | **Move** | 2012-02-09 → 2012-01-09 (-31d) | 2012-02-14 → 2012-01-12 (-33d) |
| 87 | Distribute new keys, cards | 2012-02-09 → 2012-01-09 (-31d) | 2012-02-09 → 2012-01-09 (-31d) |
| 88 | Pack and move | 2012-02-09 → 2012-01-09 (-31d) | 2012-02-14 → 2012-01-12 (-33d) |
| 89 | Move complete | 2012-02-14 → 2012-01-12 (-33d) | 2012-02-14 → 2012-01-12 (-33d) |
| 90 | **Pre-move tasks** | 2012-02-09 → 2012-01-09 (-31d) | 2012-02-14 → 2012-01-12 (-33d) |
| 91 | Install phone system | 2012-02-09 → 2012-01-09 (-31d) | 2012-02-14 → 2012-01-12 (-33d) |
| 92 | **Post-Move** | 2012-02-15 → 2012-01-13 (-33d) | 2012-02-28 → 2012-01-26 (-33d) |
| 93 | Check for damage and missing items | 2012-02-15 → 2012-01-13 (-33d) | 2012-02-28 → 2012-01-26 (-33d) |
| 94 | Schedule phone training | 2012-02-15 → 2012-01-13 (-33d) | 2012-02-15 → 2012-01-13 (-33d) |
| 95 | Schedule security training | 2012-02-15 → 2012-01-13 (-33d) | 2012-02-15 → 2012-01-13 (-33d) |
| 96 | Schedule fire drill | 2012-02-15 → 2012-01-13 (-33d) | 2012-02-15 → 2012-01-13 (-33d) |
| 97 | Schedule open house for clients | 2012-02-15 → 2012-01-13 (-33d) | 2012-02-15 → 2012-01-13 (-33d) |
| 98 | Office move complete | 2012-02-28 → 2012-01-26 (-33d) | 2012-02-28 → 2012-01-26 (-33d) |
